# AVM-WBS-2007-120712

Schedule from MS Project, 2012-05-29 to 2013-01-15, A marks actual dates.

## Calendars

- Standard: Mon-Fri 08:00-12:00, 13:00-17:00; Sat-Sun off.

## Resources

| Resource | Notes |
| --- | --- |
| Adam Nagel |  |
| Zsolt Lattmann |  |
| Kevin Smyth |  |
| Feng Shi |  |
| Joe Porter |  |
| Himanshu Neema | Staff Engineer |
| Robert Owens |  |
| Di Yao |  |
| Harmon Nine |  |
| Chris vanBuskirk |  |
| Akshay Agrawal |  |
| James Klingler |  |
| Jason Scott |  |
| Istvan Madari |  |
| Tihamer Levendovszky |  |
| Ryan Wrenn |  |
| Gabor Pap | Staff Engineer |
| Graham Hemingway |  |
| Sandeep Neema |  |
| Ted Bapty |  |
| Xenofon Koutsoukos |  |
| Joshua Carl |  |
| Patrik Meijer |  |
| Eric Hall |  |
| John Williams |  |
| Michael Anderson |  |
| Tom Withrow |  |
| Justin Knight |  |
| Georgia Tech |  |
| Verify - OSU |  |
| Verify - SIFT |  |
| Verify - SRI |  |
| Verify - PARC |  |
| Gautam Biswas |  |
| ` |  |
| David Lindecker |  |
| Alex Mendes |  |
| Ricardo |  |
| C2M2L TA1 |  |
| BAE Sys |  |
| MMIT |  |
| MIT |  |
| Verify - MIT |  |
| DA |  |
| OdW |  |

## Schedule

| ID | WBS | Task | Duration | Start | Finish | Predecessors | Complete | Remaining | Total slack | Free slack | Constraint | Resources | Work | Actual work | Team | Thread(s) |
| --- | --- | --- | --- | --- | --- | --- | --- | --- | --- | --- | --- | --- | --- | --- | --- | --- |
| 1 | C2 | **CURATE** | 39d? | 2012-05-29 A | 2012-07-20 |  | 60% | 15.56d? | 126d |  |  |  | 600h | 374.56h |  |  |
| 2 | C2.ONT | **Ontology Content** | 17d | 2012-06-25 A | 2012-07-17 |  | 96% | 0.61d | 0d |  |  |  | 104h | 104h |  |  |
| 3 | C2.ONT-01 | META Type Library creation | 10d | 2012-06-25 A | 2012-07-06 A |  | 100% |  |  |  | start no earlier than 2012-06-25 | Ryan Wrenn | 80h | 80h | VForge |  |
| 4 | C2.ONT-02 | Populate Initial Component classes | 3d | 2012-07-09 A | 2012-07-11 A | 3 | 100% |  |  |  | start no earlier than 2012-07-09 | Ryan Wrenn | 24h | 24h | VForge |  |
| 5 | C2.ONT-03 | Reconcile ontology/type-lib with delivered Ricardo drop | 1d | 2012-07-17 A | 2012-07-17 |  | 50% | 0.5d | 0d |  | must start on 2012-07-17 |  |  |  | Curate |  |
| 6 | C2.CUR | **Component Curation (per Component)** | 4d? | 2012-05-29 A | 2012-06-01 |  | 41% | 2.35d? | 161d |  |  |  |  |  |  |  |
| 7 | C2.CUR-01 | Develop component packaging and directory structure definition | 1d? | 2012-05-29 A | 2012-05-29 A |  | 100% |  |  |  |  |  |  |  | Curate |  |
| 8 | C2.CUR-02 | Create process for transforming Ricardo component wrappers to AVM Component models | 1d? | 2012-05-30 A | 2012-05-30 A | 7 | 100% |  |  |  |  |  |  |  | Curate |  |
| 9 | C2.CUR-04 | Create process for curating modelica models | 1d? | 2012-05-31 A | 2012-05-31 A | 8 | 100% |  |  |  |  |  |  |  | Curate |  |
| 10 | C2.CUR-03 | Create process for curating component parameters | 1d? | 2012-05-31 A | 2012-05-31 A | 8 | 100% |  |  |  |  |  |  |  | Curate |  |
| 11 | C2.CUR-05 | Create process for curating CAD models | 1d? | 2012-05-31 A | 2012-05-31 A | 8 | 100% |  |  |  |  |  |  |  | Curate |  |
| 12 | C2.CUR-06 | Create process for research and creating a Wiki entry for component | 1d? | 2012-05-31 A | 2012-05-31 A | 8 | 100% |  |  |  |  |  |  |  | Curate |  |
| 13 | C2.CUR-07 | Create process for converting XML to JSON or importing XML directly into CyPhy | 1d? | 2012-05-31 A | 2012-05-31 | 8 | 75% | 0.25d? | 161.25d | 0d |  |  |  |  | Curate |  |
| 14 | C2.CUR-08 | Create process for importing component testbenches | 1d? | 2012-06-01 A | 2012-06-01 | 13 | 25% | 0.75d? | 161d |  |  |  |  |  | Curate |  |
| 15 | C2.CUR-09 | Curate Ricardo transmission controller example | 3d | 2012-05-29 | 2012-05-31 |  |  |  | 162d |  |  |  |  |  | Cyber | CS5 |
| 16 | C2.CUR-10 | Curate Ricardo engine controller example | 3d | 2012-05-29 | 2012-05-31 |  |  |  | 162d |  |  |  |  |  | Cyber | CS5 |
| 17 | C2.CUR-11 | Curate Ricardo hybrid mode controller example | 3d | 2012-05-29 | 2012-05-31 |  |  |  | 162d |  |  |  |  |  | Cyber | CS5 |
| 18 | C2.ROM | **Reduced Order Models** | 39d? | 2012-05-29 A | 2012-07-20 |  | 75% | 9.75d? | 126d |  |  |  | 168h | 126h |  |  |
| 19 | C2.ROM-01 | Investigate model order reduction and simplification approaches | 4w | 2012-06-25 A | 2012-07-20 |  | 75% | 1w | 126d |  | start no earlier than 2012-06-25 | Joshua Carl | 160h | 120h | Dynamics |  |
| 20 | C2.ROM-02 | Develop reduced order models for select components | 1d? | 2012-05-29 A | 2012-05-29 |  | 75% | 0.25d? | 164d |  |  | Joshua Carl | 8h | 6h | Dynamics |  |
| 21 | C2.TCD | **Test Components and Drivers** | 34d? | 2012-05-29 A | 2012-07-13 |  | 68% | 10.84d? | 131d |  |  |  | 168h | 112.56h |  |  |
| 22 | C2.TCD-01 | Create QR Test Driver Components | 1d? | 2012-05-29 A | 2012-05-29 A |  | 100% |  |  |  |  |  |  |  | Verify |  |
| 23 | C2.TCD-02 | Create RA Test Driver Components | 1d? | 2012-05-29 A | 2012-05-29 A |  | 100% |  |  |  |  |  |  |  | Verify |  |
| 24 | C2.TCD-03 | Create Mobility Test Driver Components | 1d? | 2012-05-29 | 2012-05-29 |  |  |  | 164d |  |  |  |  |  | Mobility |  |
| 25 | C2.TCD-04 | Import Modelica Test Components | 1d? | 2012-05-29 A | 2012-05-29 A |  | 100% |  |  |  |  |  |  |  | Dynamics |  |
| 26 | C2.TCD-05 | Create QR Requirements Templates | 1d? | 2012-05-29 A | 2012-05-29 A |  | 100% |  |  |  |  |  |  |  | Verify |  |
| 27 | C2.TCD-06 | Create RA Requirements Templates | 1d? | 2012-05-29 A | 2012-05-29 A |  | 100% |  |  |  |  |  |  |  | Verify |  |
| 28 | C2.TCD-07 | Create Prismatic Test Drivers | 3d | 2012-05-29 A | 2012-05-31 |  | 67% | 0.99d | 162d |  |  | Joe Porter | 24h | 16.08h | Verify |  |
| 29 | C2.TCD-08 | Create Primatic Requirements Templates | 3d | 2012-05-29 A | 2012-05-31 |  | 67% | 0.99d | 162d |  |  | Joe Porter | 24h | 16.08h | Verify |  |
| 30 | C2.TCD-09 | Create Context model wrappers | 1d? | 2012-05-29 | 2012-05-29 |  |  |  | 164d |  |  |  |  |  | Mobility |  |
| 31 | C2.TCD-10 | Create Cyber Model Checking Pattern | 3w | 2012-06-25 A | 2012-07-13 |  | 67% | 0.99w | 0d |  | must start on 2012-06-25 | Akshay Agrawal | 120h | 80.4h | Cyber |  |

Notes:
- 5: TODO: This is a recurring task for each scheduled drop(s); insert milestones corresponding to Ricardo's schedule
- 15: RISK
- 16: RISK
- 17: RISK

| ID | WBS | Task | Type | Duration | Start | Finish | Complete | Remaining | Total slack | Free slack | Constraint | Resources | Work | Actual work | Team | Text4 |
| --- | --- | --- | --- | --- | --- | --- | --- | --- | --- | --- | --- | --- | --- | --- | --- | --- |
| 32 | C2.CYB | **Cyber Platform Models** |  | 10d | 2012-05-29 | 2012-06-11 |  |  | 155d |  |  |  | 120h |  |  |  |
| 33 | C2.CYB-01 | Develop Cyber Platform Models for planned Ricardo platforms |  | 1w | 2012-05-29 | 2012-06-04 |  |  | 160d |  |  | Joe Porter | 40h |  | Cyber |  |
| 34 | C2.CYB-02 | Develop Cyber Platform Models (in ESMoL) for RC Car platform |  | 2w | 2012-05-29 | 2012-06-11 |  |  | 155d |  |  | Joe Porter | 80h |  | Curate |  |
| 35 | C2.CFM | **Component Fault Models** |  | 5d | 2012-05-29 A | 2012-06-04 A | 100% |  |  |  |  |  |  |  |  |  |
| 36 | C2.CFM-01 | Create probablistic fault models for select components |  | 1w | 2012-05-29 A | 2012-06-04 A | 100% |  |  |  |  |  |  |  | Verify |  |
| 37 | C2.SEM | **Semantics** |  | 1d? | 2012-05-29 A | 2012-05-29 | 57% | 0.43d? | 164d |  |  |  | 40h | 32h |  |  |
| 38 | C2.SEM-01 | **Component Semantics** |  | 1d? | 2012-05-29 A | 2012-05-29 A | 100% |  |  |  |  |  | 16h | 16h |  |  |
| 39 | C2.SEM-01.1 | CyPhy to FORMULA Domains Translator |  | 1d? | 2012-05-29 A | 2012-05-29 A | 100% |  |  |  |  | Tihamer Levendovszky | 8h | 8h | Semantics |  |
| 40 | C2.SEM-01.2 | FORMULA Models to CyPhy Translator |  | 1d? | 2012-05-29 A | 2012-05-29 A | 100% |  |  |  |  | David Lindecker | 8h | 8h | Semantics |  |
| 41 | C2.SEM-02 | **Design Semantics** |  | 1d? | 2012-05-29 A | 2012-05-29 A | 100% |  |  |  |  |  | 16h | 16h |  |  |
| 42 | C2.SEM-02.1 | CyPhy to FORMULA Domains Translator |  | 1d? | 2012-05-29 A | 2012-05-29 A | 100% |  |  |  |  | Tihamer Levendovszky | 8h | 8h | Semantics |  |
| 43 | C2.SEM-02.2 | FORMULA Models to CyPhy Translator |  | 1d? | 2012-05-29 A | 2012-05-29 A | 100% |  |  |  |  | David Lindecker | 8h | 8h | Semantics |  |
| 44 | C2.SEM-03 | **Semantics of Behaviors (i.e. ESMoL)** |  | 1d? | 2012-05-29 | 2012-05-29 |  |  | 164d |  |  |  | 8h |  |  |  |
| 45 | C2.SEM-03.1 | Tech Report |  | 1d? | 2012-05-29 | 2012-05-29 |  |  | 164d |  |  | Istvan Madari | 8h |  | Semantics |  |
| 46 | C2.SEM-04 | **Algebra Documentation** |  | 1d? | 2012-05-29 | 2012-05-29 |  |  | 164d |  |  |  |  |  |  |  |
| 47 | C2.SEM-04.1 | Component Algebra Documentation |  | 1d? | 2012-05-29 | 2012-05-29 |  |  | 164d |  |  |  |  |  | Semantics |  |
| 48 | C2.SEM-04.2 | Design Algebra Documentation |  | 1d? | 2012-05-29 | 2012-05-29 |  |  | 164d |  |  |  |  |  | Semantics |  |
| 49 | ** | C2M2L TA1 Model Release | milestone | 0d | 2012-07-25 | 2012-07-25 |  |  | 89d | 0d | finish no earlier than 2012-07-25 | Ricardo |  |  | External | EXTERN |
| 50 | ** | C2M2L TA3 Environmental Model Release | milestone | 0d | 2012-07-16 | 2012-07-16 |  |  | 123.5d | 12d | start no earlier than 2012-07-16 | BAE Sys |  |  | External |  |
| 51 | ** | FANG Seed Design | milestone | 0d | 2012-09-03 | 2012-09-03 |  |  | 96d |  | start no earlier than 2012-09-03 | Ricardo |  |  | External |  |
| 52 | FG | **FANG** |  | 143d? | 2012-05-29 A | 2012-12-14 | 59% | 58.09d? | 22d |  |  |  |  |  |  |  |
| 53 | FG.BLD | **Build & Test** |  | 1d? | 2012-05-29 A | 2012-05-29 | 50% | 0.5d? | 164d |  |  |  |  |  |  |  |
| 54 | FG.BLD-01 | Automated Unit Testing |  | 1d? | 2012-05-29 A | 2012-05-29 | 50% | 0.5d? | 164d |  |  |  |  |  | PKG |  |
| 55 | FG.BLD-02 | **Automated Functional Testing** |  | 1d? | 2012-05-29 A | 2012-05-29 | 50% | 0.5d? | 164d |  |  |  |  |  |  |  |
| 56 | FG.BLD-02.1 | Automated GUI Scripts |  | 1d? | 2012-05-29 A | 2012-05-29 | 50% | 0.5d? | 164d |  |  |  |  |  | PKG |  |

Notes:
- 33: RISK:
- 34: ·Alex Mendes / ·Rui Jaing / ·Di Shang / ·Jiannin Wang

| ID | WBS | Task | Type | Duration | Start | Finish | Predecessors | Complete | Remaining | Total slack | Free slack | Constraint | Resources | Work | Actual work | Team | Thread(s) |
| --- | --- | --- | --- | --- | --- | --- | --- | --- | --- | --- | --- | --- | --- | --- | --- | --- | --- |
| 57 | FG.PKG | **Packaging** |  | 135d | 2012-06-08 A | 2012-12-14 |  |  | 135d | 22d |  |  |  |  |  |  |  |
| 58 | FG.PKG-01 | **Release Milestones** |  | 135d | 2012-06-08 A | 2012-12-14 |  |  | 135d | 22d |  |  |  |  |  |  |  |
| 59 | FG.PKG-01.1 | Alpha Release | milestone | 0d | 2012-06-08 A | 2012-06-08 A |  | 100% |  |  |  | finish no earlier than 2012-06-08 | Chris vanBuskirk |  |  | PKG |  |
| 60 | FG.PKG-01.2 | PDR Release | milestone | 0d | 2012-07-13 A | 2012-07-13 A |  | 100% |  |  |  | start no earlier than 2012-07-13 | Chris vanBuskirk |  |  | PKG |  |
| 61 | FG.PKG-01.3 | CDR Release | milestone | 0d | 2012-08-31 A | 2012-08-31 |  | 50% | 0d | 97d |  | start no earlier than 2012-08-31 | Chris vanBuskirk |  |  | PKG |  |
| 62 | FG.PKG-01.4 | Beta Release | milestone | 0d | 2012-09-14 | 2012-09-14 |  |  |  | 87d |  | start no earlier than 2012-09-14 | Chris vanBuskirk |  |  | PKG |  |
| 63 | FG.PKG-01.5 | Release Candidate 1 | milestone | 0d | 2012-10-12 | 2012-10-12 |  |  |  | 67d |  | start no earlier than 2012-10-12 | Chris vanBuskirk |  |  | PKG |  |
| 64 | FG.PKG-01.6 | Release Candidate 2 | milestone | 0d | 2012-11-16 | 2012-11-16 |  |  |  | 42d |  | start no earlier than 2012-11-16 | Chris vanBuskirk |  |  | PKG |  |
| 65 | FG.PKG-01.7 | Go Live Release | milestone | 0d | 2012-12-14 | 2012-12-14 |  |  |  | 22d |  | start no earlier than 2012-12-14 | Chris vanBuskirk |  |  | External |  |
| 66 | FG.USR | **User Support** |  | 1d? | 2012-05-29 A | 2012-05-29 |  | 44% | 0.56d? | 164d |  |  |  |  |  |  |  |
| 67 | FG.USR-01 | Obtain VU-Net Code for HelpDesk |  | 1d? | 2012-05-29 | 2012-05-29 |  |  |  | 164d |  |  |  |  |  | FANG |  |
| 68 | FG.USR-02 | **Set up 'Tools' Project on VForge** |  | 1d? | 2012-05-29 A | 2012-05-29 |  | 58% | 0.42d? | 164d |  |  |  |  |  |  |  |
| 69 | FG.USR-02.1 | Test Issue Tracking System |  | 1d? | 2012-05-29 A | 2012-05-29 A |  | 100% |  |  |  |  |  |  |  | PKG |  |
| 70 | FG.USR-02.2 | Create Wiki for Tool Distribution |  | 1d? | 2012-05-29 A | 2012-05-29 |  | 75% | 0.25d? | 164d |  |  |  |  |  | PKG | ST1 |
| 71 | FG.USR-02.3 | Create Automated Ticket Status Tracking Reports |  | 1d? | 2012-05-29 | 2012-05-29 |  |  |  | 164d |  |  |  |  |  | PKG |  |
| 72 | FG.DOC | **Documentation & Tutorials** |  | 1d? | 2012-05-29 A | 2012-05-29 A |  | 100% |  |  |  |  |  |  |  | FANG |  |
| 73 | FG.DOC-01 | RC Car Tutorial |  | 1d? | 2012-05-29 A | 2012-05-29 A |  | 100% |  |  |  |  |  |  |  | Curate |  |
| 74 | FG.DOC-02 | **Model Migration** |  | 1d? | 2012-05-29 A | 2012-05-29 A |  | 100% |  |  |  |  |  |  |  |  |  |
| 75 | FG.DOC-02.1 | Structural Interface Evolution Impacts |  | 1d? | 2012-05-29 A | 2012-05-29 A |  | 100% |  |  |  |  |  |  |  | CAD / FEA |  |
| 76 | MB | MBARC |  | 1d? | 2012-05-29 A | 2012-05-29 |  | 25% | 0.75d? | 164d |  |  | MIT | 8h | 2h |  |  |
| 77 | RL | **Releases and Beta Test Phases** |  | 109d | 2012-08-15 A | 2013-01-15 |  | 11% | 97.15d | 0d |  |  |  |  |  |  |  |
| 78 | RL.09a | REL 0.9 Alpha | milestone | 0d | 2012-08-15 A | 2012-08-15 A |  | 100% |  |  |  | start no earlier than 2012-08-15 |  |  |  | RELEASE |  |
| 79 | RL.*** | REL 0.9 Alpha Test (META & FANG Testers) |  | 10d | 2012-08-15 A | 2012-08-28 A | 78 | 100% |  |  |  |  |  |  |  |  |  |
| 80 | RL.*** | Critical Design Review (Go/No Go for BETA Test) |  | 2d | 2012-08-31 | 2012-09-03 | 78, 79 |  |  | 22d | 8d | start no earlier than 2012-08-31 |  |  |  |  |  |
| 81 | RL.09b | REL 0.9 Beta | milestone | 0d | 2012-09-14 | 2012-09-14 | 80 |  |  | 14d | 1d | start no earlier than 2012-09-14 |  |  |  | RELEASE |  |
| 82 | RL.*** | Pre-Beta Test Dry Run (META, FANG, + Friends) |  | 10d | 2012-09-17 | 2012-09-28 | 80, 81 |  |  | 13d | 0d | start no earlier than 2012-09-17 |  |  |  |  |  |
| 83 | RL.v09 | REL 0.9 Release | milestone | 0d | 2012-09-28 | 2012-09-28 | 82 |  |  | 51d | 0d |  |  |  |  | RELEASE |  |
| 84 | RL.*** | Beta Test Part1 (All Users With AUG MAJOR Functionality) |  | 1mo | 2012-10-01 | 2012-10-26 | 82 |  |  | 13d | 0d |  |  |  |  |  |  |
| 85 | RL.*** | RC 1.0 (internal) | milestone | 0d | 2012-10-12 | 2012-10-12 |  |  |  | 52d | 0d | start no earlier than 2012-10-12 |  |  |  | RELEASE |  |
| 86 | RL.vRC | RC 1.0 Release | milestone | 0d | 2012-10-29 | 2012-10-29 |  |  |  | 41d | 0d | start no earlier than 2012-10-29 |  |  |  | RELEASE |  |
| 87 | RL.*** | Beta Test Part 2 (All Users with OCT MAJOR Functionality) |  | 1mo | 2012-10-29 | 2012-11-23 | 84 |  |  | 13d | 0d |  |  |  |  |  |  |
| 88 | RL.*** | Patch Release Roll-Up |  | 5d | 2012-11-26 | 2012-11-30 | 84, 87 |  |  | 13d | 0d |  |  |  |  |  |  |
| 89 | RL.*** | Beta Post Test |  | 15d | 2012-12-03 | 2012-12-21 | 88 |  |  | 13d | 10d |  |  |  |  |  |  |
| 90 | RL.v10 | 1.0 FINAL Release | milestone | 0d | 2012-12-21 | 2012-12-21 |  |  |  | 17d |  | start no earlier than 2012-12-21 |  |  |  | RELEASE |  |
| 91 | RL.*** | Holidays |  | 7d | 2012-12-21 | 2012-12-31 |  |  |  | 10d |  | start no earlier than 2012-12-21 |  |  |  |  |  |
| 92 | RL.*** | Go-Live Review |  | 3d | 2013-01-07 | 2013-01-09 | 89, 87 |  |  | 3d |  | start no earlier than 2013-01-07 |  |  |  |  |  |
| 93 | RL.*** | Go-Live Event | milestone | 0d | 2013-01-15 | 2013-01-15 |  |  |  | 0d |  | start no earlier than 2013-01-15 |  |  |  |  |  |

Notes:
- 60: PDR: Jul 9th (Pendleton) / ·Initialize a DesignSpace / ·Elaborate a Designspace / ·Simulate a DesignPoint / ·(abstraction) / ·Parametric Optimization / ·PCC
- 61: CDR: Aug 28th-30th (location TBD) / ·Foundry round-trip / ·CAD/FEA / ·Multi-Abstraction Simulations

| ID | WBS | Task | Type | Duration | Start | Finish | Predecessors | Complete | Remaining | Total slack | Free slack | Constraint | Resources | Work | Actual work | Text5 | Team | Thread(s) |
| --- | --- | --- | --- | --- | --- | --- | --- | --- | --- | --- | --- | --- | --- | --- | --- | --- | --- | --- |
| 94 | MX | **META-X** |  | 124d? | 2012-05-29 A | 2012-11-16 |  | 31% | 85.33d? | 41d |  |  |  | 8265.43h | 3432.63h |  |  |  |
| 95 | MX.CPL | **CyPhy Language** |  | 113d | 2012-05-29 A | 2012-11-01 |  | 47% | 59.69d | 52d |  |  |  | 1344h | 703.2h | -------- |  |  |
| 96 | MX.CPL-01 | Change component instances to component references |  | 4d | 2012-06-04 A | 2012-07-13 | 60FF | 95% | 0.2d | 132d |  |  | Adam Nagel | 32h | 30.4h | JUL | Language |  |
| 97 | MX.CPL-02 | **Language Extensions for Phenomena/Abstraction/Fidelity** |  | 8d | 2012-07-25 | 2012-08-06 |  |  |  | 100d | 0d |  |  |  |  | AUG15 |  |  |
| 98 | MX.CPL-02.1 | Dependency: C2M2L Release Fidelity Def/Examp. | milestone | 0d | 2012-07-25 | 2012-07-25 | 49 |  |  | 108d |  | start no earlier than 2012-07-25 | C2M2L TA1 |  |  |  | Dynamics |  |
| 99 | MX.CPL-02.2 | Design |  | 5d | 2012-07-26 | 2012-08-01 | 49, 60 |  |  | 100d | 0d |  |  |  |  |  | Dynamics |  |
| 100 | MX.CPL-02.3 | Implement |  | 3d | 2012-08-02 | 2012-08-06 | 99 |  |  | 100d | 0d |  |  |  |  |  | Dynamics |  |
| 101 | MX.CPL-03 | **Language Extensions for CURATE** |  | 14d | 2012-07-16 | 2012-08-02 |  |  |  | 97d | 50d |  |  | 144h |  | AUG15 |  |  |
| 102 | MX.CPL-03.1 | Internal/External Environments support in CyPhy |  | 3d | 2012-07-16 | 2012-07-18 |  |  |  | 113d | 0d | start no earlier than 2012-07-16 | Adam Nagel; Zsolt Lattmann | 48h |  | AUG15 | Language |  |
| 103 | MX.CPL-03.2 | Extend CyPhy Modelica and Power Ports to cover Ricardo used ports |  | 3d | 2012-07-26 | 2012-07-30 | 49 |  |  | 89d | 0d |  | Zsolt Lattmann; Adam Nagel | 48h |  | AUG15 | Dynamics |  |
| 104 | MX.CPL-03.3 | Hierarchical Port Management |  | 3d | 2012-07-31 | 2012-08-02 | 49, 103 |  |  | 89d | 0d |  | Zsolt Lattmann; Adam Nagel | 48h |  | AUG15 | Language |  |
| 105 | MX.CPL-04 | **Language Extensions for Cyber** |  | 73.3d | 2012-05-29 A | 2012-09-07 |  | 58% | 30.9d | 76.7d | 24.7d |  |  | 280h | 179.6h | AUG15 |  |  |
| 106 | MX.CPL-04.1 | **Integrate the SignalFlow, Stateflow Language into CyPhy** |  | 12.15d | 2012-05-29 A | 2012-06-14 |  | 86% | 1.64d | 137.85d |  |  |  | 136h | 117.6h | -------- |  | CS1 |
| 107 | MX.CPL-04.1.1 | Fix aspects and connections for signal port types in CyPhyML |  | 1d | 2012-05-29 A | 2012-05-29 |  | 95% | 0.05d | 149d |  |  | Adam Nagel | 8h | 7.6h | AUG15 | Language | CS1 |
| 108 | MX.CPL-04.1.2 | CyPhyML ports, cnxn, & attribs to support Component interface spec & aspect mapping |  | 3d | 2012-05-29 A | 2012-05-31 |  | 95% | 0.15d | 145.8d | 0d |  | Joe Porter | 24h | 22.8h | AUG15 | Cyber | CS1 |
| 109 | MX.CPL-04.1.3 | Create block library and icons |  | 5d | 2012-05-29 A | 2012-06-07 | 108 | 85% | 0.75d | 142.4d | 0d |  | Joe Porter | 40h | 34h | AUG15 | Cyber | CS1 |
| 110 | MX.CPL-04.1.4 | Integrate block library into CyPhyML |  | 3d | 2012-06-07 A | 2012-06-12 | 109 | 85% | 0.45d | 139.85d |  |  | Adam Nagel | 24h | 20.4h | AUG15 | Cyber | CS1 |
| 111 | MX.CPL-04.1.5 | Add integrated block library to build/installer |  | 2d | 2012-06-12 A | 2012-06-14 A | 110 | 100% |  |  |  |  | Kevin Smyth | 16h | 16h | AUG15 | Cyber | CS1 |
| 112 | MX.CPL-04.1.6 | Create common controller components by hand |  | 3d | 2012-06-05 A | 2012-06-07 |  | 70% | 0.9d | 142d | 21.75d |  | Joe Porter | 24h | 16.8h | AUG15 | Cyber | CS1 |
| 113 | MX.CPL-04.2 | **Create Library** |  | 8.85d | 2012-07-04 A | 2012-07-17 |  | 53% | 4.13d | 98.05d | 1.4d |  |  | 72h | 38.4h |  |  |  |
| 114 | MX.CPL-04.2.1 | Create Stateflow-like controllers by hand |  | 3d | 2012-07-04 A | 2012-07-09 |  | 90% | 0.3d | 100d | 0d | start no earlier than 2012-07-09 | Joe Porter | 24h | 21.6h | AUG15 | Cyber | CS1 |
| 115 | MX.CPL-04.2.2 | Open controller design models |  | 3d | 2012-07-09 A | 2012-07-12 | 114 | 25% | 2.25d | 99.25d | 0d |  | Joe Porter | 24h | 6h | AUG15 | Cyber | CS3 |
| 116 | MX.CPL-04.2.3 | Create a library of components for controllers |  | 3d | 2012-07-09 A | 2012-07-17 | 115 | 45% | 1.65d | 98.05d |  |  | Joe Porter | 24h | 10.8h | AUG15 | Cyber | CS5 |
| 117 | MX.CPL-04.3 | **Example designs using existing controller components** |  | 64.3d | 2012-06-11 A | 2012-09-07 |  | 42% | 37.28d | 76.7d |  |  |  | 72h | 23.6h |  |  | CS5 |
| 118 | MX.CPL-04.3.1 | Transmission example |  | 13.2d | 2012-07-19 A | 2012-08-07 | 113 | 50% | 6.6d | 90.05d | 0.25d |  | Joe Porter | 24h | 2h | AUG15 | Cyber | CS5 |
| 119 | MX.CPL-04.3.2 | Platform models typical of military vehicle design |  | 3d | 2012-08-07 A | 2012-08-10 | 118 | 25% | 2.25d | 89.05d | 0d |  | Joe Porter | 24h | 6h | AUG15 | Cyber | CS2 |
| 120 | MX.CPL-04.3.3 | Suspension example |  | 3d | 2012-06-11 A | 2012-08-27 | 119 | 40% | 1.8d | 79.6d | 0d |  |  |  |  | OCT | Cyber | CS5 |
| 121 | MX.CPL-04.3.4 | Drivetrain example |  | 3d | 2012-06-11 A | 2012-08-30 | 120 | 45% | 1.65d | 78.5d | 0d |  |  |  |  | OCT | Cyber | CS5 |
| 122 | MX.CPL-04.3.5 | DC converter example |  | 3d | 2012-06-11 A | 2012-09-04 | 121 | 65% | 1.05d | 76.7d | 0d |  | Alex Mendes | 24h | 15.6h | OCT | Cyber | CS5 |
| 123 | MX.CPL-04.3.6 | Create 'existing controller code' examples |  | 3d | 2012-09-04 | 2012-09-07 | 122 |  |  | 76.7d |  |  |  |  |  | OCT | Cyber | CS6 |

Notes:
- 99: RISK
- 100: RISK
- 103: RISK
- 107: Some of the connection types aren't available in all the right aspects. Fixed by Adam on 6/4/2012.
- 108: Need to create a spec document that maps semantics between the interface spec and the CyPhyML constructs.
- 109: Tested the use of the block library for a Simulink controller (non-Stateflow). It's fairly smooth. The Stateflow part still needs testing.
- 110: The library loader AddOn is complete, and may need additional testing.
- 111: Adam will create some infrastructure for this for the type library. We will want this to work in the same manner.
- 112: When we import Simulink models we first compile the model to collect the data types, sample rates, etc… from the type inferencing pass. The current approach for is to import the library blocks with some reasonable defaults, but to change them the user will have to edit the parameters by hand in every block and also make sure the parameters are consistent. Created most of the transmission controller model. The whole process is very flaky.
- 114: Same issue as CS1.1.5T applies here.
- 115: Design model should have idealized components
- 116: Created specs, now need to create models and integrate them.
- 117: Need to update outdated controller examples using library components.
- 118: Updated controller to the old version of SignalFlow (VFLang), need to update dynamics to Modelica.
- 119: Ricardo sent a list of boards that they typically use. We have the specs now for those boards, but we need to look at the specs and create models. I sent them additional questions regarding the hardware choices and the distribution of functions on those boards.
- 120: Ported dynamics to Modelica, nearly finished with controller re-work.
- 121: Put the GenericPID component into the library, and then compose it with the drive train.
- 122: Created circuit dynamics in Modelica. The controllers need to be done. Alex has created a "working" Modelica diode implementation, and has the buck direction simulating properly. The boost direction still needs work.

| ID | WBS | Task | Duration | Start | Finish | Predecessors | Complete | Remaining | Total slack | Free slack | Constraint | Resources | Work | Actual work | Text5 | Team | Thread(s) | Text4 |
| --- | --- | --- | --- | --- | --- | --- | --- | --- | --- | --- | --- | --- | --- | --- | --- | --- | --- | --- |
| 124 | MX.CPL-05 | **Language Extensions for CAD / FEA** | 30d | 2012-07-02 A | 2012-08-10 |  | 10% | 27d | 96d | 44d |  |  | 320h | 24h | -------- |  |  |  |
| 125 | MX.CPL-05.1 | Language Extensions for Kinematic Joints, Complex Geometry | 5d | 2012-07-02 A | 2012-07-06 |  | 60% | 2d | 96d | 0d |  | Di Yao | 40h | 24h | AUG15 | CAD / FEA |  |  |
| 126 | MX.CPL-05.2 | Language Extensions for Other Stress Constraints and Forcing Functions | 5d | 2012-07-09 | 2012-07-13 | 125 |  |  | 96d | 0d |  | Di Yao | 40h |  | AUG15 | CAD / FEA | CT5 |  |
| 127 | MX.CPL-05.3 | Language Extensions for Thermal | 10d | 2012-07-16 | 2012-07-27 | 126 |  |  | 96d | 0d |  | Di Yao | 80h |  | OCT | CAD / FEA |  |  |
| 128 | MX.CPL-05.4 | Language Extensions for Loads Parameters from other Testbenches | 5d | 2012-07-30 | 2012-08-03 | 127 |  |  | 96d | 0d |  | Adam Nagel; Robert Owens; Di Yao | 120h |  | AUG15 | CAD / FEA |  |  |
| 129 | MX.CPL-05.5 | CAD TestBench Meta-Model Changes | 5d | 2012-08-06 | 2012-08-10 | 128 |  |  | 96d |  |  | Di Yao | 40h |  | AUG15 | CAD / FEA |  |  |
| 130 | MX.CPL-06 | **Language Extensions for Verification** | 25d | 2012-06-04 A | 2012-07-06 |  | 96% | 0.89d | 0d |  |  |  | 360h | 350h | AUG15 |  |  |  |
| 131 | MX.CPL-06.1 | Language extensions for QR Testbench concepts | 5d | 2012-06-28 A | 2012-07-04 A |  | 100% |  |  |  | start no earlier than 2012-06-28 | Adam Nagel; Joe Porter | 80h | 80h | AUG15 | Verify | CT6 |  |
| 132 | MX.CPL-06.2 | Language extensions for RA Testbench concepts | 5d | 2012-06-29 A | 2012-07-05 A |  | 100% |  |  |  | start no earlier than 2012-06-29 | Adam Nagel; Joe Porter | 80h | 80h | AUG15 | Verify | CT7 |  |
| 133 | MX.CPL-06.3 | Language extensions for Prismatic Testbench concepts | 5w | 2012-06-04 A | 2012-07-06 |  | 95% | 0.25w | 0d |  | must start on 2012-06-11 | Joe Porter | 200h | 190h | AUG15 | Verify |  |  |
| 134 | MX.CPL-07 | Language extensions for Mobility Testbench concepts | 5d | 2012-06-25 A | 2012-07-13 | 125 | 80% | 1d | 116.5d | 0d |  | Jason Scott; Adam Nagel | 80h | 64h | AUG15 | Mobility | CT8 |  |
| 135 | MX.CPL-08 | Language extensions for modeling FMU in CyPhy | 3d | 2012-07-13 | 2012-07-17 | 60 |  |  | 114d | 0d |  | Adam Nagel; Zsolt Lattmann | 48h |  | OCT | Cyber |  |  |
| 136 | MX.CPL-09 | Language extensions for capturing complexity attributes | 3d | 2012-06-11 A | 2012-06-25 | 59 | 75% | 0.75d | 127.5d | 0d |  | Adam Nagel; Himanshu Neema | 48h | 36h | AUG15 | Verify |  |  |
| 137 | MX.CPL-10 | Language extensions to capture probablistic parameters | 2d | 2012-07-13 A | 2012-07-16 | 60 | 60% | 0.8d | 115d | 63d |  | Adam Nagel; Joe Porter | 32h | 19.2h | SEP | Verify |  |  |
| 138 | MX.CPL-11 | CyPhyML Language Documentation | 15d | 2012-10-12 | 2012-11-01 | 97, 101, 105, 124, 130, 134, 135, 136, 137, 85 |  |  | 52d |  |  |  |  |  | FINAL | Language |  |  |
| 139 | MX.CLM | **Component Library Manager** | 63d? | 2012-06-11 A | 2012-09-05 |  | 36% | 40.24d? | 93d |  |  |  | 368h | 193.6h | -------- |  |  |  |
| 140 | MX.CLM-01 | **Interfacing to DDP & VF** | 38d? | 2012-06-11 A | 2012-08-01 |  | 81% | 7.19d? | 118d |  |  |  | 216h | 181.6h | AUG15 |  |  |  |
| 141 | MX.CLM-01.1 | Component Export to JSON DDP | 4d | 2012-06-11 A | 2012-06-14 | 59 | 85% | 0.6d | 145.8d | 0d |  | Harmon Nine | 32h | 27.2h | AUG15 | Language | CC1, CC2 | CURATE |
| 142 | MX.CLM-01.2 | Component Import from JSON DDP | 8d | 2012-06-15 A | 2012-06-26 | 141 | 85% | 1.2d | 139d | 0d |  | Harmon Nine | 64h | 54.4h | AUG15 | Language | CC3 | USER |
| 143 | MX.CLM-01.3 | Convert Component usage to GME References | 5d | 2012-06-11 A | 2012-06-15 A | 59 | 100% |  |  |  |  | Feng Shi | 40h | 40h | AUG15 | Language |  | USER |
| 144 | MX.CLM-01.4 | Vehicle Forge Component Exchange and Project Repo Interface | 10d | 2012-06-27 A | 2012-07-10 | 142 | 75% | 2.5d | 134d |  |  | Gabor Pap | 80h | 60h | OCT | VForge | CD5 | USER |
| 145 | MX.CLM-01.5 | Manage Update Notifications | 1d? | 2012-08-01 | 2012-08-01 |  |  |  | 118d |  | start no earlier than 2012-08-01 |  |  |  | OCT | VForge | GN10 | USER |
| 146 | MX.CLM-02 | **CyPhy Component Model Mgt** | 39d | 2012-07-13 A | 2012-09-05 |  | 4% | 37.5d | 93d |  |  |  | 152h | 12h | AUG15 |  |  |  |
| 147 | MX.CLM-02.1 | Design CLM | 5d | 2012-07-23 A | 2012-07-27 | 60 | 30% | 3.5d | 93d | 0d | start no earlier than 2012-07-23 | Adam Nagel | 40h | 12h | AUG15 | Language |  |  |
| 148 | MX.CLM-02.2 | Surrogate CLM GUI | 8d | 2012-07-30 | 2012-08-08 | 147 |  |  | 93d | 0d |  | Kevin Smyth | 64h |  | AUG15 | VForge |  | USER |
| 149 | MX.CLM-02.3 | CyPhy Model Insert and Component Folder creation | 3d | 2012-07-13 | 2012-07-17 | 60 |  |  | 126d | 0d |  | Harmon Nine | 24h |  | AUG15 | Language | CD1 | USER |
| 150 | MX.CLM-02.4 | Automatic Creation of Folder Structure | 3d | 2012-07-18 | 2012-07-20 | 149 |  |  | 126d |  |  | Harmon Nine | 24h |  | AUG15 | Language | CD1 | USER |
| 151 | MX.CLM-02.5 | Advanced CLM Capabilities | 20d | 2012-08-09 | 2012-09-05 | 148 |  |  | 93d |  |  |  |  |  | DEC15 | Language |  | USER |

Notes:
- 129: ·Add custom geomerty / ·Clean up connections
- 151: ·manage component artifacts? (e.g. CAD files)

| ID | WBS | Task | Duration | Start | Finish | Predecessors | Complete | Remaining | Total slack | Free slack | Constraint | Resources | Work | Actual work | Text5 | Thread(s) | Team | Text4 |
| --- | --- | --- | --- | --- | --- | --- | --- | --- | --- | --- | --- | --- | --- | --- | --- | --- | --- | --- |
| 152 | MX.VFD | **Design Importer Exporter** | 59d | 2012-06-14 A | 2012-09-04 |  | 30% | 41.3d | 94d |  |  |  | 280h | 72h | -------- |  |  |  |
| 153 | MX.VFD-01 | JSON DDP Design Import | 10d | 2012-08-15 | 2012-08-28 | 403, 60 |  |  | 94d | 0d | start no earlier than 2012-08-15 | Istvan Madari | 80h |  | OCT | * CD1, CD2 | DSE | USER |
| 154 | MX.VFD-02 | Model Update from Imported JSON DDP | 5d | 2012-08-29 | 2012-09-04 | 153 |  |  | 94d |  |  |  |  |  | OCT | CD2 | DSE | USER |
| 155 | MX.VFD-03 | Auto-import components referenced in imported design | 5d | 2012-08-29 | 2012-09-04 | 153, 444, 142 |  |  | 94d |  | start no earlier than 2012-08-15 | Adam Nagel; Harmon Nine; Himanshu Neema | 120h |  | OCT | CD5 | Language | USER |
| 156 | MX.VFD-04 | JSON DDP Design Export | 10d | 2012-06-14 A | 2012-06-27 | 403 | 90% | 1d | 125d | 0d |  | Himanshu Neema | 80h | 72h | AUG15 | * CD3, CD5, AX1 | DSE | USER |
| 157 | MX.DSE | **Combinatorial DSE** | 42d | 2012-05-30 A | 2012-07-26 |  | 95% | 2.27d | 122d |  |  |  | 104h | 104h | -------- |  |  |  |
| 158 | MX.DSE-01 | **Update interpreters to use references** | 24d | 2012-05-30 A | 2012-07-02 A | 96 | 100% |  |  |  |  |  | 104h | 104h | -------- | AC1 |  |  |
| 159 | MX.DSE-01.1 | Design Space Helper | 10d | 2012-05-30 A | 2012-06-12 A |  | 100% |  |  |  |  | Feng Shi | 80h | 80h | AUG15 |  | DSE | USER |
| 160 | MX.DSE-01.2 | Component Assy Exporter | 3d | 2012-06-13 A | 2012-06-15 A | 159 | 100% |  |  |  |  | Feng Shi | 24h | 24h | AUG15 |  | DSE | USER |
| 161 | MX.DSE-01.3 | Criticality Meter | 3d | 2012-06-19 A | 2012-06-21 A |  | 100% |  |  |  | must start on 2012-06-19 |  |  |  | OCT |  | DSE | USER |
| 162 | MX.DSE-01.4 | Design Space Refiner | 3d | 2012-06-28 A | 2012-07-02 A |  | 100% |  |  |  | must finish on 2012-07-02 |  |  |  | OCT |  | DSE | USER |
| 163 | MX.DSE-01.5 | Container Converter | 3d | 2012-06-22 A | 2012-06-26 A |  | 100% |  |  |  | must start on 2012-06-22 |  |  |  | AUG15 | CD5_DS | DSE | USER |
| 164 | MX.DSE-02 | Build Example (RC Car) Design Space Model w/ Realistic Constraints | 10d | 2012-07-13 A | 2012-07-26 | 60 | 90% | 1d | 122d |  |  |  |  |  | AUG15 |  | DSE | USER |
| 165 | MX.DSE-03 | Update Documentation | 5d | 2012-07-18 A | 2012-07-24 | 160, 161, 162, 163 | 80% | 1d | 124d |  |  |  |  |  | AUG15 |  | DSE | USER |
| 166 | MX.PET | **Parametric DSE** | 42d | 2012-07-02 A | 2012-08-28 |  | 22% | 32.67d | 99d |  |  |  | 208h | 24h | -------- |  |  |  |
| 167 | MX.PET-01 | **Generation** | 42d | 2012-07-02 A | 2012-08-28 |  | 22% | 32.67d | 99d |  |  |  | 208h | 24h | -------- |  |  |  |
| 168 | MX.PET-01.1 | **Open MDAO Integration** | 42d | 2012-07-02 A | 2012-08-28 | 59 | 40% | 25.2d | 99d |  |  |  | 80h | 24h | AUG15 |  |  |  |
| 169 | MX.PET-01.1.1 | Optimization | 4d | 2012-07-02 A | 2012-07-05 |  | 50% | 2d | 118d | 0d | start no earlier than 2012-07-02 |  |  |  | AUG15 | CT3 | PET |  |
| 170 | MX.PET-01.1.3 | DOE | 6d | 2012-07-06 A | 2012-08-06 | 169 | 50% | 3d | 99d | 0d |  |  |  |  | AUG15 | CT3 | PET |  |
| 171 | MX.PET-01.1.2 | Surrogate Generation / Documentation | 2w | 2012-08-15 A | 2012-08-28 | 78 | 30% | 1.4w | 99d |  |  | Georgia Tech | 80h | 24h | OCT | CT3 | PET |  |
| 172 | MX.PET-01.2 | OpenModelica Wrappers | 8d | 2012-08-07 | 2012-08-16 | 170 |  |  | 99d | 0d |  | Georgia Tech | 64h |  | AUG15 | CT3 | PET |  |
| 173 | MX.PET-01.4 | Dymola Wrapper | 8d | 2012-08-17 | 2012-08-28 | 78, 172 |  |  | 99d |  |  | Georgia Tech | 64h |  | OCT | CT3 | PET |  |
| 174 | MX.TIF | **Testbench Importer Exporter** | 17d? | 2012-07-13 | 2012-08-06 | 60 |  |  | 115d |  |  |  | 96h |  | -------- |  |  |  |
| 175 | MX.TIF-01 | JSON Testbench Import | 2w | 2012-07-24 | 2012-08-06 | 397 |  |  | 115d |  | start no earlier than 2012-07-24 | Harmon Nine | 80h |  | AUG15 | CT2 | Language | USER |
| 176 | MX.TIF-02 | JSON Testbench Export | 1d? | 2012-07-16 | 2012-07-16 | 397 |  |  | 130d |  |  | Harmon Nine | 8h |  | AUG15 | CT1 | Language | FANG |
| 177 | MX.TIF-03 | Import Testbench from Modelica | 1d? | 2012-07-13 | 2012-07-13 |  |  |  | 131d |  |  | Zsolt Lattmann | 8h |  | OCT | CT1b | Dynamics | CURATE |

| ID | WBS | Task | Duration | Start | Finish | Predecessors | Complete | Remaining | Total slack | Free slack | Constraint | Resources | Work | Actual work | Text5 | Team | Thread(s) | Text4 |
| --- | --- | --- | --- | --- | --- | --- | --- | --- | --- | --- | --- | --- | --- | --- | --- | --- | --- | --- |
| 178 | MX.MAS | **Master Interpreter** | 40d | 2012-06-18 A | 2012-08-10 |  | 29% | 28.24d | 111d |  |  |  |  |  | -------- |  |  |  |
| 179 | MX.MAS-01 | Add SVN/GIT Interface | 2d | 2012-07-13 | 2012-07-16 | 60 |  |  | 130d |  |  |  |  |  | OCT | Dynamics |  |  |
| 180 | MX.MAS-02 | Add Vehicle Forge Interface | 4d | 2012-07-18 | 2012-07-23 | 190 |  |  | 124d | 0d |  |  |  |  | OCT | Dynamics | AD1b |  |
| 181 | MX.MAS-03 | Update to support component references instead of component instances | 5d | 2012-06-18 A | 2012-06-22 A |  | 100% |  |  |  |  |  |  |  | AUG15 | Dynamics |  |  |
| 182 | MX.MAS-04 | Create zip of testbench directory for submission to Job Manager | 1d | 2012-08-06 | 2012-08-06 | 206 |  |  | 115d |  | start no earlier than 2012-06-25 |  |  |  | OCT | Dynamics | AD1b |  |
| 183 | MX.MAS-05 | Submit testbench directory zip to Job Manager | 1d | 2012-07-24 | 2012-07-24 | 180 |  |  | 124d |  |  |  |  |  | OCT | Dynamics | AD1b |  |
| 184 | MX.MAS-06 | Update with support for Phenomena/Abstraction/Fidelity | 4d | 2012-08-07 | 2012-08-10 | 97 |  |  | 111d |  |  |  |  |  | AUG15 | Dynamics |  |  |
| 185 | MX.BAT | **Test Battery Interpreter** | 17d | 2012-07-13 | 2012-08-06 | 60 |  |  | 115d |  |  |  |  |  |  |  |  |  |
| 186 | MX.BAT-01 | Design | 6d | 2012-07-13 | 2012-07-20 | 60 |  |  | 115d | 0d |  |  |  |  |  | Dynamics |  |  |
| 187 | MX.BAT-02 | Implement | 11d | 2012-07-23 | 2012-08-06 | 186 |  |  | 115d |  |  |  |  |  |  | Dynamics |  |  |
| 188 | MX.JBM | **Analysis Job Manager** | 12d | 2012-07-13 | 2012-07-30 | 60 |  |  | 120d |  |  |  | 40h |  | OCT |  |  |  |
| 189 | MX.JBM-01 | Update Local Exec | 5d | 2012-07-13 | 2012-07-19 |  |  |  | 127d |  |  | Zsolt Lattmann | 40h |  | OCT | Dynamics |  | USER |
| 190 | MX.JBM-02 | Interface to VF Job Manager for submitting jobs | 3d | 2012-07-13 | 2012-07-17 | 462 |  |  | 120d | 0d |  |  |  |  | OCT | Dynamics | AD1b | USER |
| 191 | MX.JBM-03 | Master Interpreter Interface for receiving analysis jobs ? | 5d | 2012-07-18 | 2012-07-24 | 190 |  |  | 120d | 0d |  |  |  |  | OCT | Dynamics | AD1b | USER |
| 192 | MX.JBM-04 | Interface to VF Job Manager for polling completion | 2d | 2012-07-25 | 2012-07-26 | 191 |  |  | 120d | 0d |  |  |  |  | OCT | Dynamics | AD1b | USER |
| 193 | MX.JBM-05 | Interface to VF Job Manager for downloading results | 2d | 2012-07-27 | 2012-07-30 | 408, 192 |  |  | 120d |  |  |  |  |  | OCT | Dynamics | AD1b | USER |
| 194 | MX.DYN | **Dynamics Analysis** | 120d? | 2012-06-04 A | 2012-11-16 |  | 26% | 88.79d? | 41d |  |  |  | 318.4h | 168h | -------- |  |  |  |
| 195 | MX.DYN-01 | **Support Language Updates** | 51d | 2012-07-19 A | 2012-09-27 |  | 29% | 36.16d | 77d |  |  |  | 120h | 60h | -------- |  |  |  |
| 196 | MX.DYN-01.1 | Interpreter support for Multi-Phenomena, Multi-Fidelity Models | 10d | 2012-09-14 | 2012-09-27 | 100 |  |  | 77d |  | start no earlier than 2012-09-14 |  |  |  | AUG15 | Dynamics |  |  |
| 197 | MX.DYN-01.2 | Add support for all Ricardo used Modelica Port Types | 10d | 2012-08-07 A | 2012-08-20 | 100 | 85% | 1.5d | 105d |  |  |  |  |  | AUG15 | Dynamics |  |  |
| 198 | MX.DYN-01.3 | Interpreter support for Hierarchical connectors | 10d | 2012-08-03 | 2012-08-16 | 104 |  |  | 107d |  |  |  |  |  | AUG15 | Dynamics |  |  |
| 199 | MX.DYN-01.4 | Add support for Modelica Internal/External Environments | 10d | 2012-07-19 | 2012-08-01 | 102 |  |  | 118d |  |  |  |  |  | AUG15 | Dynamics |  |  |
| 200 | MX.DYN-01.5 | Support Environmental Models As Test Components | 15d | 2012-08-01 A | 2012-08-21 | 50, 202 | 50% | 7.5d | 104d |  |  | Jason Scott | 120h | 60h | AUG15 | Mobility |  |  |
| 201 | MX.DYN-02 | **Cyber & Mobility Updates** | 12.5d? | 2012-07-13 A | 2012-07-31 |  | 19% | 10.16d? | 119d |  |  |  | 40h |  | -------- |  |  |  |
| 202 | MX.DYN-02.1 | Add support for FMU-s | 2w | 2012-07-18 A | 2012-07-31 | 135 | 30% | 1.4w | 111.5d | 0d |  |  |  |  | OCT | Dynamics |  |  |
| 203 | MX.DYN-02.2 | Add support for execution of Cyber generated Modelica wrappers | 5d | 2012-07-16 | 2012-07-20 |  |  |  | 126d |  | start no earlier than 2012-07-16 | Zsolt Lattmann | 40h |  | AUG15 | Dynamics | AS1 |  |
| 204 | MX.DYN-02.3 | Add support for multi-simulator integration needed for Mobility | 1d? | 2012-07-13 | 2012-07-16 | 134 |  |  | 130.5d |  |  |  |  |  | OCT | Mobility | AM2 |  |

Notes:
- 182: TODO: diff between this and MX.DYN-03.2 ?
- 184: RISK
- 191: TODO: duplicate of MX.DYN-03.1 ? / should read 'submitting', not 'receiving' ?
- 196: RISK
- 197: RISK
- 198: RISK

| ID | WBS | Task | Duration | Start | Finish | Predecessors | Complete | Remaining | Total slack | Free slack | Constraint | Resources | Work | Actual work | Text5 | Thread(s) | Team | Text4 |
| --- | --- | --- | --- | --- | --- | --- | --- | --- | --- | --- | --- | --- | --- | --- | --- | --- | --- | --- |
| 205 | MX.DYN-03 | **Vehicle Forge Integration** | 15d | 2012-07-23 A | 2012-08-10 |  | 42% | 8.75d | 111d |  |  |  |  |  | -------- |  |  |  |
| 206 | MX.DYN-03.1 | Manifest Generation for Remote VF Execution | 10d | 2012-07-23 A | 2012-08-03 |  | 25% | 7.5d | 115d | 0d | start no earlier than 2012-07-23 |  |  |  | OCT | AD1b | Dynamics |  |
| 207 | MX.DYN-03.2 | Job Manager Input Creation | 10d | 2012-07-30 | 2012-08-10 |  |  |  | 111d |  | start no earlier than 2012-07-30 |  |  |  | OCT | AD1b | Dynamics |  |
| 208 | MX.DYN-03.3 | VF Notification Generation | 10d | 2012-07-30 A | 2012-08-10 A |  | 100% |  |  |  | start no earlier than 2012-07-30 |  |  |  | OCT | GN10 | VForge |  |
| 209 | MX.DYN-04 | **Results and Scoring** | 24d | 2012-07-19 A | 2012-08-21 |  | 69% | 7.5d | 104d |  |  |  |  |  | -------- |  |  |  |
| 210 | MX.DYN-04.1 | PostProcessing Function Generation (Python) | 5d | 2012-07-23 | 2012-07-27 |  |  |  | 121d |  | start no earlier than 2012-07-23 |  |  |  | AUG15 |  | Dynamics |  |
| 211 | MX.DYN-04.2 | Produce Metadata index file for Results (Define Content) | 2d | 2012-07-30 A | 2012-07-31 A | 210 | 100% |  |  |  |  |  |  |  | AUG15 |  | Dynamics |  |
| 212 | MX.DYN-04.3 | Local Visualization Browser | 15d | 2012-08-01 A | 2012-08-21 | 211 | 80% | 3d | 104d |  |  |  |  |  | OCT | AD2a | Dashboard |  |
| 213 | MX.DYN-04.4 | Integration and Testing of Dashboard (VF.DSH) | 2w | 2012-07-19 A | 2012-08-01 | 408, 476 | 80% | 0.4w | 118d |  |  |  |  |  | AUG15 | AD2b | Dashboard |  |
| 214 | MX.DYN-05 | Modelica Testing Tool/Benchmarking Component Set | 45d | 2012-06-11 A | 2012-08-10 |  | 53% | 21d | 111d |  | start no earlier than 2012-06-11 | Patrik Meijer [30%] | 158.4h | 108h | AUG15 |  | Dynamics | INTERNAL |
| 215 | MX.DYN-06 | OpenModelica Contract Management | 6mo | 2012-06-04 | 2012-11-16 |  |  |  | 41d |  | start no earlier than 2012-06-04 |  |  |  | AUG15 |  | Dynamics |  |
| 216 | MX.CYB | **Cyber Analysis** | 70d? | 2012-05-29 A | 2012-09-03 |  | 28% | 50.56d? | 95d |  |  |  | 1696h | 642h | -------- |  |  |  |
| 217 | MX.CYB-01 | **Simulink/Stateflow Importer to CyPhy** | 35d | 2012-05-29 A | 2012-07-16 |  | 50% | 17.5d | 130d |  |  |  | 56h | 40h |  |  |  |  |
| 218 | MX.CYB-01.1 | Integrate Simulink/Stateflow Importer to create CyPhy SignalFlow/StateFlow models | 4d | 2012-05-29 A | 2012-06-01 A |  | 100% |  |  |  |  | Harmon Nine | 32h | 32h | AUG15 | CS1 | Cyber |  |
| 219 | MX.CYB-01.2 | Integrate the SignalFlow, StateFlow interpreter with Dynamics Interpreter | 2d | 2012-07-13 | 2012-07-16 | 218, 60 |  |  | 130d |  |  | Zsolt Lattmann | 16h |  | AUG15 |  | Dynamics |  |
| 220 | MX.CYB-01.3 | **Testing** | 4d | 2012-06-04 A | 2012-06-07 |  | 25% | 3d | 157d |  |  |  | 8h | 8h | -------- |  |  |  |
| 221 | MX.CYB-01.3.1 | Test import of common controller components | 1d | 2012-06-04 | 2012-06-04 | 218 |  |  | 160d |  |  |  |  |  | -------- | CS1 | Cyber |  |
| 222 | MX.CYB-01.3.2 | **Test import of Stateflow controllers** | 3d | 2012-06-05 A | 2012-06-07 |  | 33% | 2d | 157d |  |  |  | 8h | 8h | -------- | CS1 |  |  |
| 223 | MX.CYB-01.3.2.1 | Test Transmission controller | 1d | 2012-06-05 A | 2012-06-05 A | 221 | 100% |  |  |  |  | Joe Porter | 8h | 8h | -------- | CS1 | Cyber |  |
| 224 | MX.CYB-01.3.2.2 | Test other Stateflow controllers | 2d | 2012-06-06 | 2012-06-07 | 223 |  |  | 157d |  |  |  |  |  | -------- | CS1 | Cyber |  |
| 225 | MX.CYB-02 | **SignalFlow/StateFlow Generator** | 10d | 2012-05-29 A | 2012-06-11 |  | 8% | 9.24d | 155d |  |  |  | 264h | 20h |  |  |  |  |
| 226 | MX.CYB-02.1 | Generate Modelica equations from SignalFlow/StateFlow models | 2w | 2012-05-29 | 2012-06-11 |  |  |  | 155d |  |  | Tihamer Levendovszky | 80h |  | AUG15 |  | Cyber |  |
| 227 | MX.CYB-02.2 | Generate FMI Wrapper from SignalFlow, StateFlow models | 2w | 2012-05-29 A | 2012-06-11 |  | 25% | 1.5w | 155d |  |  | Feng Shi | 80h | 20h |  |  | Cyber |  |
| 228 | MX.CYB-02.3 | Export CyPhy SignalFlow/StateFlow models to ESMoL Toolchain | 1w | 2012-05-29 | 2012-06-04 |  |  |  | 159d | 0d |  | Harmon Nine | 40h |  | AUG15 | * CS3, CS4 | Cyber |  |
| 229 | MX.CYB-02.4 | Modify ESMoL TrueTime Generator to Target Modelica | 1w | 2012-05-29 | 2012-06-04 |  |  |  | 160d |  |  | Graham Hemingway | 40h |  | OCT |  | Cyber |  |
| 230 | MX.CYB-02.5 | Develop CAN Bus Mapping from ESMoL Platform Models | 3d | 2012-06-05 | 2012-06-07 | 245 |  |  | 157d |  |  | Joe Porter | 24h |  | OCT |  | Cyber |  |

Notes:
- 206: TODO: duplicate of MX.JBM-03 ? / i.e. how to run a particular type of job (environment, software/library dependencies, entry point, ...)
- 207: TODO: diff between this and MX.MAS-04 ?

| ID | WBS | Task | Duration | Start | Finish | Predecessors | Complete | Remaining | Total slack | Free slack | Resources | Work | Actual work | Team | Text5 | Thread(s) |
| --- | --- | --- | --- | --- | --- | --- | --- | --- | --- | --- | --- | --- | --- | --- | --- | --- |
| 231 | MX.CYB-03 | **ESMOL Toolchain Updates/Integratino** | 70d? | 2012-05-29 A | 2012-09-03 |  | 37% | 44.1d? | 95d |  |  | 624h | 292h |  |  |  |
| 232 | MX.CYB-03.1 | Import TrueTime FMU in CyPhy Models and make available for Platform Timed Simulation | 3d | 2012-05-29 | 2012-05-31 |  |  |  | 162d |  | Patrik Meijer | 24h |  | Cyber | OCT |  |
| 233 | MX.CYB-03.2 | Bugfixes in ESMoL Toolchain | 14w | 2012-05-29 A | 2012-09-03 |  | 45% | 7.7w | 95d |  | Joe Porter | 560h | 252h | Cyber |  |  |
| 234 | MX.CYB-03.3 | Export the design from CyPhy to ESMoL | 1d? | 2012-06-05 | 2012-06-05 | 228 |  |  | 159d |  |  |  |  | Cyber |  | CS3 |
| 235 | MX.CYB-03.4 | Export Controller design to ESMoL | 1d? | 2012-06-05 | 2012-06-05 | 228 |  |  | 159d |  |  |  |  | Cyber |  | CS4 |
| 236 | MX.CYB-03.5 | Generate functional code from ESMoL | 1w | 2012-05-29 A | 2012-06-04 A |  | 100% |  |  |  | Harmon Nine | 40h | 40h | Cyber |  | CS4 |
| 237 | MX.CYB-03.6 | Generate platform-specific code from ESMoL | 1mo | 2012-05-29 A | 2012-06-25 |  | 3% | 0.97mo | 144d | 0d |  |  |  | Cyber |  | CS4 |
| 238 | MX.CYB-04 | **Import FMUs** | 5d | 2012-05-29 | 2012-06-04 |  |  |  | 160d |  |  |  |  |  |  | CS7 |
| 239 | MX.CYB-04.1 | Parse FMU XML interface description. | 2d | 2012-05-29 | 2012-05-30 |  |  |  | 163d |  |  |  |  | Cyber |  | CS7 |
| 240 | MX.CYB-04.2 | Create CyPhyML component behavior definition from FMU XML. | 1d | 2012-05-29 | 2012-05-29 |  |  |  | 164d |  |  |  |  | Cyber |  | CS7 |
| 241 | MX.CYB-04.3 | Update the semantics if necessary | 1w | 2012-05-29 | 2012-06-04 |  |  |  | 160d |  |  |  |  | Cyber |  | CS7 |
| 242 | MX.CYB-04.4 | Test the FMU import | 2d | 2012-05-29 | 2012-05-30 |  |  |  | 163d |  |  |  |  | Cyber |  | CS7 |
| 243 | MX.CYB-05 | Generate CBMC Model Checking code from Property Specifications | 2w | 2012-05-29 | 2012-06-11 |  |  |  | 155d |  | Akshay Agrawal | 80h |  | Cyber |  |  |
| 244 | MX.CYB-06 | **ESMoL Language** | 40d? | 2012-05-29 A | 2012-07-23 |  | 28% | 28.71d? | 125d |  |  | 672h | 290h |  |  |  |
| 245 | MX.CYB-06.1 | Extend ESMoL Platform Modeling Language to model CAN Bus | 1w | 2012-05-29 | 2012-06-04 |  |  |  | 157d | 0d | Joe Porter | 40h |  | Cyber |  |  |
| 246 | MX.CYB-06.2 | Design platform generation templates for a typical automotive platform using CAN bus. | 1d? | 2012-06-26 | 2012-06-26 | 237 |  |  | 144d |  | Joe Porter | 8h |  | Cyber |  | CS2 |
| 247 | MX.CYB-06.3 | Update the ESMoL platform language to accommodate required concepts from CyPhyML. | 1d? | 2012-05-29 A | 2012-06-05 | 245 | 25% | 0.75d? | 159.25d |  | Joe Porter | 8h | 2h | Cyber |  | CS2 |
| 248 | MX.CYB-06.4 | Separate the platform-generation part of the transformation. | 10d | 2012-05-29 A | 2012-06-11 |  | 50% | 5d | 155d |  | Kevin Smyth | 80h | 40h | Cyber |  | CS2 |
| 249 | MX.CYB-06.5 | Specify software component interfaces in ESMoL | 4w | 2012-05-29 A | 2012-06-25 |  | 50% | 2w | 145d |  | Joe Porter | 160h | 80h | Cyber |  | CS3 |
| 250 | MX.CYB-06.6 | Specify logical architecture in ESMoL | 1d? | 2012-05-29 A | 2012-05-29 A |  | 100% |  |  |  | Joe Porter | 8h | 8h | Cyber |  | CS3 |
| 251 | MX.CYB-06.7 | Specify deadlines and end-to-end latency in ESMoL | 4w | 2012-05-29 A | 2012-06-25 |  | 50% | 2w | 145d |  |  |  |  | Cyber |  | CS4 |
| 252 | MX.CYB-06.8 | Specify allocation of tasks and messages to hardware in ESMoL | 1d? | 2012-05-29 A | 2012-05-29 A |  | 100% |  |  |  |  |  |  | Cyber |  | CS4 |
| 253 | MX.CYB-06.9 | Integrate a tool which can perform allocation | 1mo | 2012-05-29 | 2012-06-25 |  |  |  | 145d |  |  |  |  | Cyber |  | CS4 |
| 254 | MX.CYB-06.10 | Specify additional timing information in ESMoL | 1d? | 2012-05-29 A | 2012-05-29 A |  | 100% |  |  |  |  |  |  | Cyber |  | CS4 |
| 255 | MX.CYB-06.11 | Generate schedule for tasks and messages | 8w | 2012-05-29 A | 2012-07-23 |  | 50% | 4w | 125d |  | Joe Porter | 320h | 160h | Cyber |  | CS4 |
| 256 | MX.CYB-06.12 | Test the new scheduler | 1w | 2012-05-29 | 2012-06-04 |  |  |  | 160d |  | Joe Porter | 40h |  | Cyber |  | CS4 |
| 257 | MX.CYB-06.13 | Specify algorithm to check port semantics consistency | 2w | 2012-05-29 | 2012-06-11 |  |  |  | 155d | 0d |  |  |  | Cyber |  | CS5 |
| 258 | MX.CYB-06.14 | Implement algorithm to check port semantics consistency | 2d | 2012-05-29 | 2012-05-30 |  |  |  | 163d |  |  |  |  | Cyber |  | CS5 |
| 259 | MX.CYB-06.15 | Create port semantics consistency test cases | 2d | 2012-05-29 | 2012-05-30 |  |  |  | 163d |  |  |  |  | Cyber |  | CS5 |
| 260 | MX.CYB-06.16 | Specify algorithm to propagate port semantics | 2w | 2012-05-29 | 2012-06-11 | 257SS |  |  | 155d |  |  |  |  | Cyber |  | CS5 |
| 261 | MX.CYB-06.17 | Implement algorithm to propagate port semantics | 2d | 2012-05-29 | 2012-05-30 |  |  |  | 163d |  |  |  |  | Cyber |  | CS5 |
| 262 | MX.CYB-06.18 | Create test cases for port semantics propagation | 2d | 2012-05-29 | 2012-05-30 |  |  |  | 163d |  |  |  |  | Cyber |  | CS5 |
| 263 | MX.CYB-06.19 | Test Vforge import | 2d | 2012-05-29 | 2012-05-30 |  |  |  | 163d |  |  |  |  | Cyber |  | CS5 |
| 264 | MX.CYB-06.20 | Implement an importer for C function signatures | 3d | 2012-05-29 | 2012-05-31 |  |  |  | 162d |  |  |  |  | Cyber |  | CS6 |
| 265 | MX.CYB-06.21 | Create example source-code level controllers and import them. | 2d | 2012-05-29 | 2012-05-30 |  |  |  | 163d |  |  |  |  | Cyber |  | CS6 |
| 266 | MX.CYB-06.22 | Create Modelica external code interface wrapper. | 3d | 2012-05-29 | 2012-05-31 |  |  |  | 162d |  |  |  |  | Cyber |  | CS6 |
| 267 | MX.CYB-06.23 | Generate XML and interface code for FMU. | 2d | 2012-05-29 | 2012-05-30 |  |  |  | 163d |  |  |  |  | Cyber |  | CS6 |
| 268 | MX.CYB-06.24 | Compile and package external functions | 3d | 2012-05-29 | 2012-05-31 |  |  |  | 162d |  |  |  |  | Cyber |  | CS6 |
| 269 | MX.CYB-06.25 | Test generator and wrapper | 2d | 2012-05-29 | 2012-05-30 |  |  |  | 163d |  |  |  |  | Cyber |  | CS6 |
| 270 | MX.CYB-06.26 | Augment ESMoL Language for Timing specification | 1d? | 2012-05-30 | 2012-05-30 | 254 |  |  | 163d |  | Joe Porter | 8h |  | Cyber |  |  |

Notes:
- 234: We would need to translate the SignalFlow models from CyPhyML into ESMoL dataflow models
- 235: We would need to translate the SignalFlow models from CyPhyML into ESMoL dataflow models.
- 236: Needs expanded test suite, especially for Stateflow models.
- 237: RISK: Need to buy a Woodward board? / No automotive example - needs development and testing.
- 247: Added CAN bus messages and structures. Partially specified the interfaces available on an ATMega microcontroller. The underlying tool/language design has moved, so this part needs additional design now.
- 248: Existing transformation covers this, but does not separate out the physical platform part.
- 249: C function interfaces need clean-up in ESMoL. This will also require some changes to the interpreter infrastructure.
- 251: Latency specs are broken in the language and scheduler - need revisiting.
- 254: WCET and execution period based on limitations of allocated hardware.
- 255: New scheduler is nearly debugged, needs to be integrated with parser and integrated into the tool chain.
- 259: Make sure to include different kinds of potentially conflicting semantics.
- 263: Make sure port semantics are correctly captured and reflected in the component interface.
- 270: Limit the data types that can be involved.

| ID | WBS | Task | Duration | Start | Finish | Predecessors | Complete | Remaining | Total slack | Free slack | Constraint | Resources | Work | Actual work | Text5 | Team | Thread(s) |
| --- | --- | --- | --- | --- | --- | --- | --- | --- | --- | --- | --- | --- | --- | --- | --- | --- | --- |
| 271 | MX.CAD | **CAD Assembly** | 64d | 2012-05-29 A | 2012-08-24 |  | 63% | 23.59d | 72d | 0d |  |  | 595.03h | 365.03h | -------- |  |  |
| 272 | MX.CAD-01 | New CyPhy2CAD schemas | 5d | 2012-05-29 A | 2012-06-04 A | 125FF | 100% |  |  |  |  | Di Yao; Robert Owens | 11.03h | 11.03h |  | CAD / FEA |  |
| 273 | MX.CAD-02 | CAD to Mobility Input Generator | 5d | 2012-07-30 A | 2012-08-03 |  | 40% | 3d | 87d |  |  | Di Yao | 40h | 16h |  | CAD / FEA |  |
| 274 | MX.CAD-03 | Handling Islands in Metrics Schema | 5d | 2012-07-23 A | 2012-07-27 A |  | 100% |  |  |  |  | Robert Owens | 40h | 40h |  | CAD / FEA |  |
| 275 | MX.CAD-04 | Interpreter Updates | 20d | 2012-07-30 A | 2012-08-24 | 272, 274 | 90% | 2d | 72d |  | start no earlier than 2012-07-08 | Di Yao | 160h | 144h |  | CAD / FEA | AF1a |
| 276 | MX.CAD-05 | **CADCreoParametricCreateAssembly.exe modifications** | 18d | 2012-07-02 A | 2012-07-25 |  | 72% | 5d | 94d |  |  |  | 144h | 104h |  |  |  |
| 277 | MX.CAD-05.1 | STEP Creation | 5d | 2012-07-02 A | 2012-07-06 A | 272 | 100% |  |  |  |  | Robert Owens | 40h | 40h |  | CAD / FEA |  |
| 278 | MX.CAD-05.2 | Implement support for Islands | 4d | 2012-07-09 A | 2012-07-12 A | 277 | 100% |  |  |  |  | Robert Owens | 32h | 32h |  | CAD / FEA |  |
| 279 | MX.CAD-05.3 | Improved error handling/messages | 2d | 2012-07-13 A | 2012-07-16 A | 278 | 100% |  |  |  |  | Robert Owens | 16h | 16h |  | CAD / FEA |  |
| 280 | MX.CAD-05.4 | Improved CyPhy2CAD error handling/messages | 2d | 2012-07-17 A | 2012-07-18 A | 279 | 100% |  |  |  |  | Di Yao | 16h | 16h |  | CAD / FEA |  |
| 281 | MX.CAD-05.5 | STEP Conformance Tools Plan | 5d | 2012-07-19 | 2012-07-25 | 280 |  |  | 94d |  |  | Robert Owens | 40h |  |  | CAD / FEA |  |
| 282 | MX.CAD-06 | Assembly on Remote Server | 25d | 2012-07-16 A | 2012-08-17 |  | 25% | 18.75d | 77d |  | start no earlier than 2012-07-16 | Robert Owens | 200h | 50h |  | VForge |  |
| 283 | MX.FEA | **FEA Analysis** | 124d | 2012-05-29 A | 2012-11-16 |  | 36% | 79.96d | 41d |  |  |  | 432h | 100h | -------- |  |  |
| 284 | MX.FEA-01 | Factor of Safety Computation | 18d | 2012-05-29 A | 2012-07-03 A |  | 100% |  |  |  |  | Di Yao | 16h | 16h |  | CAD / FEA |  |
| 285 | MX.FEA-02 | **CADCreoParametricCreateAssembly.exe modifications** | 29d | 2012-05-29 A | 2012-07-06 A |  | 100% |  |  |  |  |  | 16h | 16h |  |  |  |
| 286 | MX.FEA-02.1 | FEAPostProcessingParameters.xml creation | 29d | 2012-05-29 A | 2012-07-06 A |  | 100% |  |  |  |  | Robert Owens | 8h | 8h |  | CAD / FEA | AF1a |
| 287 | MX.FEA-02.2 | FEA Refactoring | 10d | 2012-05-29 A | 2012-06-11 A |  | 100% |  |  |  |  | Robert Owens | 8h | 8h |  | CAD / FEA |  |
| 288 | MX.FEA-03 | Additional Constraints for Structural | 10d | 2012-07-30 A | 2012-08-10 A |  | 100% |  |  |  | start no earlier than 2012-07-30 |  |  |  |  | CAD / FEA |  |
| 289 | MX.FEA-04 | Requirements Linkage | 5d | 2012-08-13 | 2012-08-17 | 288 |  |  | 106d |  |  |  |  |  |  | CAD / FEA |  |
| 290 | MX.FEA-05 | Ability to Drive Loads from Parameters/Vectors from other TestBenches | 10d | 2012-07-23 A | 2012-08-03 |  | 25% | 7.5d | 116d |  | start no earlier than 2012-07-23 |  |  |  |  | CAD / FEA |  |
| 291 | MX.FEA-06 | Master Batch File to Automate Manual Steps | 5d | 2012-07-31 A | 2012-08-06 |  | 50% | 2.5d | 115d |  | start no earlier than 2012-07-31 |  |  |  |  | CAD / FEA | AF1a |
| 292 | MX.FEA-07 | Thermal Testbenches - Generation and FEA Exec | 25d | 2012-08-01 | 2012-09-04 |  |  |  | 22.53d | 0d | start no earlier than 2012-08-01 |  |  |  | OCT | CAD / FEA |  |
| 293 | MX.FEA-08 | Visualization Tools | 10d | 2012-08-01 | 2012-08-14 |  |  |  | 109d |  | start no earlier than 2012-08-01 |  |  |  |  | CAD / FEA | AF2a |
| 294 | MX.FEA-09 | Develop approach for computing stress values of elastic materials | 13d | 2012-06-29 A | 2012-07-17 |  | 12% | 11.5d | 129d |  |  | Robert Owens | 104h | 12h |  | CAD / FEA |  |
| 295 | MX.FEA-10 | Test FEA | 20d | 2012-09-05 A | 2012-10-02 | 292 | 25% | 15d | 17.53d | 0d |  | Robert Owens | 160h | 40h |  | CAD / FEA |  |
| 296 | MX.FEA-11 | FEA on Remote Server | 15d | 2012-09-03 A | 2012-09-21 |  | 3% | 14.55d | 81d |  | start no earlier than 2012-09-03 |  |  |  | OCT | CAD / FEA | AF1b |
| 297 | MX.FEA-12 | Prototype Implementation of Adaptive Meshing | 45d | 2012-09-17 | 2012-11-16 |  |  |  | 41d |  | start no earlier than 2012-09-17 |  |  |  | OCT | CAD / FEA |  |

Notes:
- 271: TODO: interference checks
- 272: ·Specify STEP format (e.g. 203, 203 E2, 214, ...) / ·Islands (i.e. orphans) and multiple sub-assemblies / ·Kinematic joints (revolute, ball, slider) / ·FEA complex geometry type
- 273: ·Fix CAD2Mobility_Uml schema / ·Add CAD2Mobility_Uml UDM generation project to CyPhyML.sln for Jason / ·Set up project for Jason to use CAD2Mobility APIs
- 275: ·STEP / ·Islands / ·Structural interface roles

| ID | WBS | Task | Duration | Start | Finish | Predecessors | Complete | Remaining | Total slack | Free slack | Constraint | Resources | Work | Actual work | Team | Text5 |
| --- | --- | --- | --- | --- | --- | --- | --- | --- | --- | --- | --- | --- | --- | --- | --- | --- |
| 298 | MX.FEA-13 | **Document** | 96d | 2012-06-05 A | 2012-10-16 | 295 | 41% | 56.47d | 64d |  |  |  | 96h | 16h |  |  |
| 299 | MX.FEA-13.1 | FEA (incl. current limitations) | 10d | 2012-10-03 | 2012-10-16 |  |  |  | 64d |  |  | Robert Owens | 80h |  | CAD / FEA | AUG15 |
| 300 | MX.FEA-13.2 | SciTE (CalculiX Viewer) | 5d | 2012-06-05 A | 2012-06-11 A |  | 100% |  |  |  |  | Di Yao | 8h | 8h | CAD / FEA | AUG15 |
| 301 | MX.FEA-13.3 | Materials Library | 2d | 2012-06-05 A | 2012-06-06 A |  | 100% |  |  |  |  | Di Yao | 8h | 8h | CAD / FEA | AUG15 |
| 302 | MX.FEA-14 | **Open Source Tools** | 5d | 2012-07-30 | 2012-08-03 |  |  |  |  |  |  |  | 40h |  |  |  |
| 303 | MX.FEA-14.1 | LIST FROM OpenCAE | 5d | 2012-07-30 | 2012-08-03 |  |  |  | 0d |  |  |  |  |  | CAD / FEA | AUG15 |
| 304 | MX.FEA-14.2 | Develop/Document non-Creo Plan | 5d | 2012-07-30 | 2012-08-03 |  |  |  | 0d |  |  | Robert Owens | 40h |  | CAD / FEA |  |
| 305 | MX.MOB | **Mobility Analysis** | 75d | 2012-07-02 A | 2012-10-12 |  | 2% | 73.79d | 66d |  |  |  |  |  |  | -------- |
| 306 | MX.MOB-01 | **Full Config of Mobility from Testbench** | 60d | 2012-07-02 A | 2012-09-21 |  | 7% | 55.74d | 81d |  |  |  |  |  |  | OCT |
| 307 | MX.MOB-01.1 | Kinematic Joint Generation from CAD | 20d | 2012-08-13 | 2012-09-07 |  |  |  | 81d | 0d | start no earlier than 2012-08-13 |  |  |  | Mobility | OCT |
| 308 | MX.MOB-01.2 | Generation of Solid Model from CAD model | 10d | 2012-09-10 | 2012-09-21 | 307 |  |  | 81d |  |  |  |  |  | Mobility | OCT |
| 309 | MX.MOB-01.3 | Intermediate File Definition | 3d | 2012-07-02 A | 2012-07-04 |  | 90% | 0.3d | 138d |  | start no earlier than 2012-07-02 |  |  |  | Mobility | OCT |
| 310 | MX.MOB-01.4 | Generation of Mobility Harness | 5d | 2012-09-10 | 2012-09-14 | 307 |  |  | 86d |  |  |  |  |  | Mobility | OCT |
| 311 | MX.MOB-02 | **Modelica** | 21d | 2012-08-06 | 2012-09-03 |  |  |  | 95d |  |  |  |  |  |  | OCT |
| 312 | MX.MOB-02.1 | Test Components to interface to Modelica Testbench | 10d | 2012-08-06 | 2012-08-17 |  |  |  | 95d | 0d | start no earlier than 2012-08-06 |  |  |  | Mobility | OCT |
| 313 | MX.MOB-02.2 | Definition of Interfaces (Power,Signals, Controllers) | 10d | 2012-08-20 | 2012-08-31 | 312 |  |  | 95d | 0d |  |  |  |  | Mobility | OCT |
| 314 | MX.MOB-02.3 | Configure Solver Type | 1d | 2012-09-03 | 2012-09-03 | 313 |  |  | 95d |  |  |  |  |  | Mobility | OCT |
| 315 | MX.MOB-03 | **Modeling** | 8d | 2012-08-20 | 2012-08-29 |  |  |  | 98d |  |  |  |  |  |  | AUG15 |
| 316 | MX.MOB-03.1 | Definition of KPP in Testbench | 3d | 2012-08-20 | 2012-08-22 | 312 |  |  | 98d | 0d |  |  |  |  | Mobility |  |
| 317 | MX.MOB-03.2 | Segregated Modeling - Define testbench with 3D + Lumped Param | 5d | 2012-08-23 | 2012-08-29 | 316 |  |  | 98d |  |  |  |  |  | Mobility |  |
| 318 | MX.MOB-04 | **Runtime** | 55d | 2012-07-16 | 2012-09-28 |  |  |  | 66d |  |  |  |  |  |  | OCT |
| 319 | MX.MOB-04.1 | (Physix, or Delta3D) | 5d | 2012-07-16 | 2012-07-20 |  |  |  | 66d | 0d | start no earlier than 2012-07-16 |  |  |  | Mobility | OCT |
| 320 | MX.MOB-04.2 | Adams Experiments | 10d | 2012-07-23 | 2012-08-03 | 319 |  |  | 66d | 0d |  |  |  |  | Mobility | N/A |
| 321 | MX.MOB-04.3 | Kinematic Joint Implementation | 15d | 2012-07-23 | 2012-08-10 | 319 |  |  | 111d |  |  |  |  |  | Mobility | OCT |
| 322 | MX.MOB-04.4 | Time Synchonization/Real-Time Interaction Modelica-Delta3D | 15d | 2012-08-06 | 2012-08-24 | 320 |  |  | 66d | 0d |  |  |  |  | Mobility | OCT |
| 323 | MX.MOB-04.5 | Sub-Real-Time Excecution | 10d | 2012-08-27 | 2012-09-07 | 322 |  |  | 66d | 0d |  |  |  |  | Mobility | N/A |
| 324 | MX.MOB-04.6 | Kinematic Joint Library | 15d | 2012-09-10 | 2012-09-28 | 323 |  |  | 66d | 0d |  |  |  |  | Mobility | OCT |
| 325 | MX.MOB-05 | Environment Model Support | 20d | 2012-08-06 | 2012-08-31 | 320 |  |  | 96d |  |  |  |  |  | Mobility | AUG15 |
| 326 | MX.MOB-06 | Scalability Experiments | 10d | 2012-10-01 | 2012-10-12 | 324 |  |  | 66d |  |  |  |  |  | Mobility |  |

| ID | WBS | Task | Duration | Start | Finish | Predecessors | Complete | Remaining | Total slack | Free slack | Constraint | Resources | Work | Actual work | Text5 | Team | Thread(s) |
| --- | --- | --- | --- | --- | --- | --- | --- | --- | --- | --- | --- | --- | --- | --- | --- | --- | --- |
| 327 | MX.VFY | **Verification** | 105d? | 2012-05-29 A | 2012-10-22 |  | 28% | 75.36d? | 60d |  |  |  | 1976h | 559.2h | -------- |  |  |
| 328 | MX.VFY-01 | **PCC (OSU)** | 105d | 2012-05-29 A | 2012-10-22 |  | 29% | 74.53d | 60d |  |  |  | 760h | 164h |  |  |  |
| 329 | MX.VFY-01.25 | Refine PCC Interpreter | 1w | 2012-06-19 A | 2012-06-25 A |  | 100% |  |  |  | must finish on 2012-06-25 | James Klingler | 40h | 40h |  | Verify |  |
| 330 | MX.VFY-01.1 | Finish conversion of UP_UDR PCC (method 5) to Python | 3w | 2012-05-29 A | 2012-06-18 A |  | 100% |  |  |  |  |  |  |  |  | Verify |  |
| 331 | MX.VFY-01.2 | Convert SA_FAST (method 9) to Python | 3w | 2012-06-19 | 2012-07-09 | 330 |  |  | 63d | 0d |  | Verify - OSU | 120h |  |  | Verify |  |
| 332 | MX.VFY-01.3 | Convert SA_EFAST (method 10) to Python | 3w | 2012-07-10 | 2012-07-30 | 331 |  |  | 63d | 0d |  | Verify - OSU | 120h |  |  | Verify |  |
| 333 | MX.VFY-01.4 | Convert UP_MCS (method 1) to Python | 3w | 2012-05-29 A | 2012-06-18 A |  | 100% |  |  |  |  | Verify - OSU | 120h | 120h |  | Verify |  |
| 334 | MX.VFY-01.5 | Convert select UP methods to Python | 3w | 2012-07-31 | 2012-08-20 | 332 |  |  | 63d | 0d |  | Verify - OSU | 120h |  |  | Verify |  |
| 335 | MX.VFY-01.6 | Convert select SA methods to Python | 3w | 2012-08-21 | 2012-09-10 | 334 |  |  | 63d | 0d |  | Verify - OSU | 120h |  |  | Verify |  |
| 336 | MX.VFY-01.7 | JSON format output format | 5d | 2012-06-19 A | 2012-06-25 | 330 | 10% | 4.5d | 135d | 0d |  | Zsolt Lattmann | 40h | 4h |  | Verify |  |
| 337 | MX.VFY-01.8 | Import PCC/SA JSON method into Dashboard and display | 1w | 2012-06-26 | 2012-07-02 | 336 |  |  | 135d | 0d |  | Georgia Tech | 40h |  |  | Verify |  |
| 338 | MX.VFY-01.9 | Display results graphically in Dashboard (D3) | 1w | 2012-07-03 | 2012-07-09 | 337 |  |  | 135d |  |  | Georgia Tech | 40h |  |  | Verify |  |
| 339 | MX.VFY-01.10 | Creation of OpenMDAO PCC Driver | 2w | 2012-09-11 A | 2012-09-24 | 335 | 30% | 1.4w | 60d | 0d | start no earlier than 2012-07-03 |  |  |  |  | Verify | CT4 |
| 340 | MX.VFY-01.11 | Creation ofJSON configuration format/file (I/O, method) | 3d | 2012-06-25 A | 2012-06-27 A |  | 100% |  |  |  | start no earlier than 2012-06-25 |  |  |  |  | Verify |  |
| 341 | MX.VFY-01.12 | Tail index for error quantification prototype | 4w | 2012-09-25 | 2012-10-22 | 339 |  |  | 60d |  | start no earlier than 2012-09-03 |  |  |  |  | Verify |  |
| 342 | MX.VFY-02 | **Qualitative Reasoner (PARC)** | 74d | 2012-05-29 A | 2012-09-07 |  | 40% | 44.36d | 91d |  |  |  | 480h | 240h |  |  |  |
| 343 | MX.VFY-02.1 | **Envisioner** | 60d | 2012-05-29 A | 2012-08-20 |  | 48% | 31.06d | 105d |  |  |  | 480h | 240h |  |  |  |
| 344 | MX.VFY-02.1.1 | QRM.exe | 3mo | 2012-05-29 A | 2012-08-20 |  | 50% | 1.5mo | 105d |  |  | Verify - PARC | 480h | 240h |  | Verify |  |
| 345 | MX.VFY-02.1.2 | PythonLib (input) | 2w | 2012-05-29 A | 2012-06-11 A |  | 100% |  |  |  |  |  |  |  |  | Verify |  |
| 346 | MX.VFY-02.1.3 | Develop Specification for QR Results (JSON) | 15d | 2012-07-02 A | 2012-07-20 |  | 7% | 14d | 126d |  |  |  |  |  |  | Verify |  |
| 347 | MX.VFY-02.2 | **Output** | 69.2d | 2012-05-29 A | 2012-09-03 |  | 49% | 35.25d | 95.8d |  |  |  |  |  |  |  |  |
| 348 | MX.VFY-02.2.1 | Full Envisionment | 3mo | 2012-05-29 A | 2012-08-20 |  | 60% | 1.2mo | 95.8d | 0d |  |  |  |  |  | Verify |  |
| 349 | MX.VFY-02.2.2 | Requirements table | 2w | 2012-05-29 A | 2012-09-03 | 348 | 8% | 1.84w | 95.8d |  |  |  |  |  |  | Verify |  |
| 350 | MX.VFY-02.2.3 | Develop visualizer for QR Results | 5d | 2012-08-21 | 2012-08-27 | 348 |  |  | 100d |  |  |  |  |  |  | Verify |  |

Notes:
- 329: ·Convert from Registry nodes to proper Attributes / ·Embed distributions.xml into GME models

| ID | WBS | Task | Duration | Start | Finish | Predecessors | Complete | Remaining | Total slack | Free slack | Constraint | Team |
| --- | --- | --- | --- | --- | --- | --- | --- | --- | --- | --- | --- | --- |
| 351 | MX.VFY-02.3 | **Requirements** | 74d | 2012-05-29 A | 2012-09-07 |  | 33% | 49.84d | 91d |  |  |  |
| 352 | MX.VFY-02.3.1 | Templates of Modelica Models | 1mo | 2012-06-11 A | 2012-08-24 |  | 50% | 0.5mo | 101d |  |  | Verify |
| 353 | MX.VFY-02.3.2 | Evaluation during envisionment | 2w | 2012-07-30 A | 2012-08-10 | 354 | 5% | 1.9w | 111d |  |  | Verify |
| 354 | MX.VFY-02.3.3 | Develop Mapping of Requirements to Modelica XML (or direct to QE) | 6w | 2012-06-18 A | 2012-07-27 |  | 33% | 4.02w | 111.5d | 0d | start no earlier than 2012-06-18 | Verify |
| 355 | MX.VFY-02.3.4 | **Example Modelica Models** | 74d | 2012-05-29 A | 2012-09-07 |  | 33% | 49.33d | 91d |  |  |  |
| 356 | MX.VFY-02.3.4.1 | Simple circuits | 20d | 2012-05-29 A | 2012-06-25 A |  | 100% |  |  |  |  | Verify |
| 357 | MX.VFY-02.3.4.2 | Simple Mechanical | 20d | 2012-05-29 A | 2012-06-25 A |  | 100% |  |  |  |  | Verify |
| 358 | MX.VFY-02.3.4.3 | Simplified RCDriveline | 2mo | 2012-07-16 | 2012-09-07 |  |  |  | 91d |  | start no earlier than 2012-07-16 | Verify |
| 359 | MX.VFY-02.3.4.4 | RCDriveline | 2mo | 2012-07-16 | 2012-09-07 |  |  |  | 91d |  | start no earlier than 2012-07-16 | Verify |
| 360 | MX.VFY-02.3.5 | **Model Translation** | 70d | 2012-05-29 | 2012-09-03 |  |  |  |  |  |  |  |
| 361 | MX.VFY-02.3.5.1 | Conditional Equations | 1d? | 2012-05-29 | 2012-05-29 |  |  |  | 69d |  |  | Verify |
| 362 | MX.VFY-02.3.5.2 | Boolean/Enumerations | 1d? | 2012-05-29 | 2012-05-29 |  |  |  | 69d |  |  | Verify |
| 363 | MX.VFY-02.3.5.3 | Temporal.Interpolation | 1d? | 2012-05-29 | 2012-05-29 |  |  |  | 69d |  |  | Verify |
| 364 | MX.VFY-02.3.5.4 | Arrays for functions | 1d? | 2012-05-29 | 2012-05-29 |  |  |  | 69d |  |  | Verify |
| 365 | MX.VFY-02.3.5.5 | Resolve initial state ambiguities | 1d? | 2012-05-29 | 2012-05-29 |  |  |  | 69d |  |  | Verify |
| 366 | MX.VFY-03 | **Relational Abstractions (SRI)** | 65d | 2012-05-29 A | 2012-08-27 |  | 10% | 58.37d | 100d |  |  |  |
| 367 | MX.VFY-03.1 | **Develop Mapping of Requirements to HybridSAL** | 40d | 2012-06-25 A | 2012-08-17 |  | 25% | 30d | 106d |  |  |  |
| 368 | MX.VFY-03.1.1 | Jul'12 Prototype Requirements Generator | 4w | 2012-06-25 A | 2012-07-20 |  | 50% | 2w | 106d | 0d | start no earlier than 2012-06-25 | Verify |
| 369 | MX.VFY-03.1.2 | Sep'12 Requirements Generator | 4w | 2012-07-23 | 2012-08-17 | 368 |  |  | 106d |  |  | Verify |
| 370 | MX.VFY-03.2 | **Model translator for transforming Modelica models into HybridSal models** | 65d | 2012-05-29 A | 2012-08-27 |  | 8% | 60d | 100d |  |  |  |
| 371 | MX.VFY-03.2.1 | May'12 Prototype | 5d | 2012-05-29 A | 2012-06-04 A |  | 100% |  |  |  |  | Verify |
| 372 | MX.VFY-03.2.2 | Jul'12 Version 0.5 HybridSal interpreter | 1mo | 2012-06-05 | 2012-07-02 | 371 |  |  | 100d | 0d |  | Verify |
| 373 | MX.VFY-03.2.3 | Version 1.00 | 2mo | 2012-07-03 | 2012-08-27 | 372 |  |  | 100d |  |  | Verify |
| 374 | MX.VFY-03.3 | **Develop context model infrastructure for HybridSal** | 20d | 2012-05-29 | 2012-06-25 |  |  |  | 123d |  |  |  |
| 375 | MX.VFY-03.3.1 | Jul'12 Delivery | 4w | 2012-05-29 | 2012-06-25 |  |  |  | 123d | 0d |  | Verify |
| 376 | MX.VFY-03.4 | Develop Specification for RA Results (JSON) | 2d | 2012-06-26 | 2012-06-27 | 375 |  |  | 123d | 0d |  | Verify |
| 377 | MX.VFY-03.5 | Integrate visualizer for RA Results | 4w | 2012-06-28 | 2012-07-25 | 376 |  |  | 123d |  |  | Verify |

Notes:
- 376: console only
- 377: Console only

| ID | WBS | Task | Duration | Start | Finish | Predecessors | Complete | Remaining | Total slack | Free slack | Constraint | Resources | Work | Actual work | Team | Text5 | Thread(s) |
| --- | --- | --- | --- | --- | --- | --- | --- | --- | --- | --- | --- | --- | --- | --- | --- | --- | --- |
| 378 | MX.VFY-04 | **Probablistic Verification with PRISMATIC (SIFT)** | 91d | 2012-05-29 A | 2012-10-02 |  | 3% | 88.54d | 74d |  |  |  |  |  |  |  |  |
| 379 | MX.VFY-04.1 | Develop mappings from Probablistic Requirements to PRISMATIC | 4w | 2012-08-15 | 2012-09-11 |  |  |  | 74d | 0d | start no earlier than 2012-08-15 |  |  |  | Verify |  |  |
| 380 | MX.VFY-04.2 | Develop Specification for PRISMATIC Results (JSON) | 2d | 2012-05-29 A | 2012-05-30 |  | 50% | 1d | 163d |  |  |  |  |  | Verify |  |  |
| 381 | MX.VFY-04.3 | Develop Visualizer for PRISMATIC Results | 3w | 2012-09-12 | 2012-10-02 | 379 |  |  | 74d |  |  |  |  |  | Verify |  |  |
| 382 | MX.VFY-05 | **Structural Complexity Metric** | 48d? | 2012-05-29 A | 2012-08-02 |  | 38% | 29.57d? | 117d |  |  |  | 256h | 95.2h |  |  |  |
| 383 | MX.VFY-05.1 | Convert DDP Design Model format to Structural Complexity input format | 2w | 2012-06-13 A | 2012-07-02 | 156, 136 | 90% | 0.2w | 123d | 0d |  | Himanshu Neema | 80h | 72h | DSE |  |  |
| 384 | MX.VFY-05.2 | Develop specification for complexity result (JSON) | 2d | 2012-07-03 | 2012-07-04 | 383 |  |  | 123d | 6d |  | Adam Nagel | 16h |  | Language |  |  |
| 385 | MX.VFY-05.3 | Develop visualization for complexity metric (Dashboard) | 15d | 2012-07-13 | 2012-08-02 | 384, 60 |  |  | 117d |  |  | Georgia Tech | 120h |  | Dashboard |  |  |
| 386 | MX.VFY-05.07 | Integrate Structural Complexity Analysis executable with Master Interpreter | 2d | 2012-06-29 A | 2012-07-03 | 383, 136 | 95% | 0.1d | 139.9d |  |  | Himanshu Neema | 16h | 15.2h | DSE |  |  |
| 387 | MX.VFY-05.08 | Integrate Structural Complexity Analysis executable with installer | 1d | 2012-05-29 A | 2012-05-29 A | 386 | 100% |  |  |  |  | Kevin Smyth | 8h | 8h | DSE |  |  |
| 388 | MX.VFY-05.09 | Define heuristics for determining complexity of cnxns | 1d? | 2012-05-29 | 2012-05-29 |  |  |  | 164d |  |  | Verify - MIT; OdW | 16h |  | Verify |  |  |
| 389 | MX.VFY-06 | **Dynamic Complexity Metric (Entropy based)** | 57d? | 2012-05-29 A | 2012-08-15 |  | 13% | 49.75d? | 108d |  |  |  | 480h | 60h |  |  |  |
| 390 | MX.VFY-06.06 | Convert from MATLAB to Python | 1d? | 2012-05-29 | 2012-05-29 |  |  |  | 164d |  |  | Verify - MIT; DA | 16h |  | Verify |  |  |
| 391 | MX.VFY-06.1 | Integrate Complexity Metric with PCC | 8w | 2012-05-29 A | 2012-07-23 |  | 19% | 6.5w | 125d |  |  | Zsolt Lattmann | 320h | 60h | Verify |  |  |
| 392 | MX.VFY-06.2 | Develop specification for complexity result (JSON) | 3d | 2012-07-23 | 2012-07-25 |  |  |  | 108d | 0d | start no earlier than 2012-07-23 | Adam Nagel | 24h |  | Language |  |  |
| 393 | MX.VFY-06.3 | Develop visualization for complexity metric (Dashboard) | 15d | 2012-07-26 | 2012-08-15 | 392 |  |  | 108d |  |  | Georgia Tech | 120h |  | Dashboard |  |  |
| 394 | MX.STD | **AVM Standards** | 42d? | 2012-06-11 A | 2012-08-07 |  | 57% | 18.12d? | 114d |  |  |  | 392h | 248.4h |  | -------- |  |
| 395 | MX.STD-01 | AVM Component Interchange Format update and maintenance | 20d | 2012-06-11 A | 2012-07-06 |  | 99% | 0.2d | 123d | 0d | start no earlier than 2012-06-11 | Adam Nagel | 160h | 158.4h | Language | AUG15 |  |
| 396 | MX.STD-02 | AVM Design Interchange Format update for tool-specific extensions and maintenance | 1d? | 2012-07-09 A | 2012-07-09 | 395 | 50% | 0.5d? | 135d |  |  | Adam Nagel | 8h | 4h | Language | AUG15 |  |
| 397 | MX.STD-03 | AVM Testbench Interchange Format definition and maintenance | 1w | 2012-07-09 A | 2012-07-13 | 395 | 40% | 0.6w | 121d | 0d |  | Adam Nagel | 40h | 16h | Language | AUG15 | CT2 |
| 398 | MX.STD-04 | **API for accessing JSON Component (C#)** | 22d | 2012-06-25 A | 2012-07-24 | 480 | 57% | 9.35d | 113.8d | 0d |  |  | 80h | 46h |  |  |  |
| 399 | MX.STD-04.1 | Support Core Types | 5d | 2012-06-25 A | 2012-06-29 A |  | 100% |  |  |  |  | Adam Nagel | 40h | 40h | Language | AUG15 |  |
| 400 | MX.STD-04.2 | Support Extended Types | 5d | 2012-07-18 A | 2012-07-24 | 399 | 15% | 4.25d | 113.8d |  | start no earlier than 2012-07-02 | Adam Nagel | 40h | 6h | Language | AUG15 |  |
| 402 | MX.STD-05 | API for accessing JSON Component (External use Python) | 2w | 2012-07-25 | 2012-08-07 | 480, 398 |  |  | 113.8d | 0d |  | Adam Nagel | 80h |  | Language | OCT |  |
| 403 | MX.STD-06 | API for accessing JSON Design (C#) | 3d | 2012-06-11 A | 2012-06-13 A |  | 100% |  |  |  | start no earlier than 2012-06-11 | Adam Nagel | 24h | 24h | Language | AUG15 | CD1 |
| 404 | MX.STD-07 | API for accessing JSON Design (External use Python) | 2w | 2012-06-14 A | 2012-06-27 | 403 | 25% | 1.5w | 143d |  |  |  |  |  | Language | OCT |  |

Notes:
- 379: Pending language changes
- 399: TODO: Core Types keep will continually be added... how to handle this?

| ID | WBS | Task | Duration | Start | Finish | Predecessors | Complete | Remaining | Total slack | Free slack | Constraint | Resources | Work | Actual work | Text5 | Thread(s) | Team |
| --- | --- | --- | --- | --- | --- | --- | --- | --- | --- | --- | --- | --- | --- | --- | --- | --- | --- |
| 405 | MX.DTO | **Data Organization and Definition** | 15d | 2012-06-18 A | 2012-07-06 |  | 55% | 6.75d | 136d |  |  |  | 240h | 132h | -------- |  |  |
| 406 | MX.DTO-01 | Define META Project files and directory structure | 5d | 2012-06-18 A | 2012-06-22 |  | 85% | 0.75d | 113.5d | 0d |  | Adam Nagel; Zsolt Lattmann | 80h | 68h | AUG15 | SV1 | Language |
| 407 | MX.DTO-02 | Define CyPhy Project structure with multi file storage | 5d | 2012-06-25 A | 2012-06-29 | 406 | 25% | 3.75d | 141d |  |  | Adam Nagel; Zsolt Lattmann | 80h | 20h | AUG15 |  | Language |
| 408 | MX.DTO-03 | Define Directory Structure Definition for Results | 10d | 2012-06-25 A | 2012-07-06 | 406 | 55% | 4.5d | 108d | 0d | start no earlier than 2012-06-18 | Zsolt Lattmann | 80h | 44h | AUG15 | * AD1a, AD1b, AD2a, AD2b | Dynamics |
| 409 | MX.*VF | **Vehicle Forge Integration** | 3d | 2012-05-29 A | 2012-05-31 A |  | 100% |  |  |  |  |  | 32h | 32h | -------- |  |  |
| 410 | MX.*VF-01 | QUDT/Units Type Library | 3d | 2012-05-29 A | 2012-05-31 A |  | 100% |  |  |  |  | Harmon Nine | 24h | 24h | AUG15 |  | VForge |
| 411 | MX.*VF-02 | CyPhy <--> QUDT Units Conversions | 1d | 2012-05-29 A | 2012-05-29 A |  | 100% |  |  |  |  | Harmon Nine | 8h | 8h | AUG15 |  | VForge |
| 412 | MX.MFG | Manufacturing | 1d? | 2012-05-29 | 2012-05-29 |  |  |  | 164d |  |  |  |  |  |  |  | Manufacturing |
| 413 | MX.DSH | **Dashboard** | 1d? | 2012-05-29 A | 2012-05-29 |  | 62% | 0.38d? | 164d |  |  |  | 144h | 89.2h |  |  |  |
| 414 | MX.DSH-01 | Convert to a Fluid layout | 1d? | 2012-05-29 A | 2012-05-29 |  | 50% | 0.5d? | 164d |  |  | Georgia Tech | 8h | 4h |  |  | Dashboard |
| 415 | MX.DSH-02 | Fix Variable Scope Issues in order to run within an iFrame | 1d? | 2012-05-29 A | 2012-05-29 A |  | 100% |  |  |  |  | Georgia Tech | 8h | 8h |  |  | Dashboard |
| 416 | MX.DSH-03 | **New Widgets** | 1d? | 2012-05-29 A | 2012-05-29 |  | 67% | 0.33d? | 164d |  |  |  | 48h | 32h |  |  |  |
| 417 | MX.DSH-03.1 | Multi-Variant Plot | 1d? | 2012-05-29 A | 2012-05-29 A |  | 100% |  |  |  |  | Georgia Tech | 8h | 8h |  |  | Dashboard |
| 418 | MX.DSH-03.2 | 2-D Scatter Plots | 1d? | 2012-05-29 A | 2012-05-29 A |  | 100% |  |  |  |  | Georgia Tech | 8h | 8h |  |  | Dashboard |
| 419 | MX.DSH-03.3 | Parallel Coordinate Plot | 1d? | 2012-05-29 A | 2012-05-29 A |  | 100% |  |  |  |  | Georgia Tech | 8h | 8h |  |  | Dashboard |
| 420 | MX.DSH-03.4 | Pie Chart | 1d? | 2012-05-29 | 2012-05-29 |  |  |  | 164d |  |  | Georgia Tech | 8h |  |  |  | Dashboard |
| 421 | MX.DSH-03.5 | Normal Distribution Charts | 1d? | 2012-05-29 A | 2012-05-29 |  | 50% | 0.5d? | 164d |  |  | Georgia Tech | 8h | 4h |  |  | Dashboard |
| 422 | MX.DSH-03.6 | Constraint Plot | 1d? | 2012-05-29 A | 2012-05-29 |  | 50% | 0.5d? | 164d |  |  | Georgia Tech | 8h | 4h |  |  | Dashboard |
| 423 | MX.DSH-04 | Point Dashboard to Repository for Data, using the manifest file | 1d? | 2012-05-29 A | 2012-05-29 A |  | 100% |  |  |  |  | Georgia Tech | 8h | 8h |  |  | Dashboard |
| 424 | MX.DSH-06 | Variable Selection for each Widget | 1d? | 2012-05-29 A | 2012-05-29 |  | 85% | 0.15d? | 164d |  |  | Georgia Tech | 8h | 6.8h |  |  | Dashboard |
| 425 | MX.DSH-07 | Client Side Data Module for consistent widget interaction | 1d? | 2012-05-29 A | 2012-05-29 |  | 85% | 0.15d? | 164d |  |  | Georgia Tech | 8h | 6.8h |  |  | Dashboard |
| 426 | MX.DSH-08 | Finish Other Widgets Shown on Mock-ups, such as Pareto, Simple Table, etc. | 1d? | 2012-05-29 A | 2012-05-29 |  | 50% | 0.5d? | 164d |  |  | Georgia Tech | 8h | 4h |  |  | Dashboard |
| 427 | MX.DSH-09 | Support Integration of MAUF as service on VF | 1d? | 2012-05-29 A | 2012-05-29 |  | 85% | 0.15d? | 164d |  |  | Georgia Tech | 8h | 6.8h |  |  | Dashboard |
| 428 | MX.DSH-10 | Develop Requirements Visualization | 1d? | 2012-05-29 A | 2012-05-29 |  | 85% | 0.15d? | 164d |  |  | Georgia Tech | 8h | 6.8h |  |  | Dashboard |
| 429 | MX.DSH-11 | Develop Scoring Detailed Report (for Users) | 1d? | 2012-05-29 A | 2012-05-29 |  | 75% | 0.25d? | 164d |  |  | Georgia Tech | 8h | 6h |  |  | Dashboard |
| 430 | MX.DSH-12 | Develop Tutorial or Help Tips with each Widget | 1d? | 2012-05-29 | 2012-05-29 |  |  |  | 164d |  |  | Georgia Tech | 8h |  |  |  | Dashboard |
| 431 | MX.DSH-13 | Support any Bugs found during FANG testing | 1d? | 2012-05-29 | 2012-05-29 |  |  |  | 164d |  |  | Georgia Tech | 8h |  |  |  | Dashboard |
| 432 | MX.DSH-14 | Enhancements as Identified through the Course of FANG competitions | 1d? | 2012-05-29 | 2012-05-29 |  |  |  | 164d |  |  | Georgia Tech | 8h |  |  |  | Dashboard |

Notes:
- 408: RISK: Depends on Dashboard
- 412: RISK

| ID | WBS | Task | Type | Duration | Start | Finish | Predecessors | Complete | Remaining | Total slack | Free slack | Constraint | Resources | Work | Actual work | Text5 | Team | Thread(s) |
| --- | --- | --- | --- | --- | --- | --- | --- | --- | --- | --- | --- | --- | --- | --- | --- | --- | --- | --- |
| 433 | OM | **OpenModelica Subcontract** |  | 100d | 2012-07-09 | 2012-11-23 |  |  |  | 0d |  |  |  |  |  | -------- |  |  |
| 434 | OM.BGN | Contract Start | milestone | 0d | 2012-07-09 | 2012-07-09 |  |  |  | 0d |  | must start on 2012-07-09 |  |  |  |  | Dynamics |  |
| 435 | OM.Rv1 | 10 weeks |  | 10w | 2012-07-09 | 2012-09-14 | 434 |  |  | 36d | 0d |  |  |  |  | OCT | Dynamics |  |
| 436 | OM.REL | Release Final |  | 10w | 2012-09-17 | 2012-11-23 | 435 |  |  | 36d |  |  |  |  |  | FINAL | Dynamics |  |
| 437 | VF | **Vehicle Forge** |  | 124d? | 2012-05-29 A | 2012-11-16 |  | 41% | 73.75d? | 41d |  |  |  | 2344h | 1085.28h | -------- |  |  |
| 438 | VF.CEX | **Component Exchange** |  | 56.45d? | 2012-05-29 A | 2012-08-15 |  | 71% | 16.43d? | 108.55d |  |  |  | 1016h | 696.8h | -------- |  |  |
| 439 | VF.CEX-01 | Component Classification Hierarchy Database |  | 3w | 2012-07-02 A | 2012-07-20 |  | 90% | 0.3w | 122d | 0d | start no earlier than 2012-07-02 | Kevin Smyth | 120h | 108h |  | VForge | SV6 |
| 440 | VF.CEX-02 | Component Classification Hierarchy Ontology Editor |  | 3w | 2012-07-23 A | 2012-08-10 | 439 | 87% | 0.39w | 111d |  |  | Gabor Pap; Kevin Smyth | 240h | 208.8h |  | VForge | SV6 |
| 441 | VF.CEX-03 | Component Search |  | 2w | 2012-06-28 A | 2012-07-11 |  | 85% | 0.3w | 133d |  | start no earlier than 2012-06-28 | Gabor Pap | 80h | 68h |  | VForge | * CC3, SV9 |
| 442 | VF.CEX-04 | Component Editor |  | 4w | 2012-06-18 A | 2012-07-13 |  | 50% | 2w | 131d |  | start no earlier than 2012-06-18 | Gabor Pap; Kevin Smyth | 320h | 160h |  | VForge | SV5 |
| 443 | VF.CEX-05 | Component Verification from Ontology |  | 2w | 2012-07-23 A | 2012-08-03 | 439 | 60% | 0.8w | 116d |  |  | Kevin Smyth; Gabor Pap | 160h | 96h |  | VForge | SV5 |
| 444 | VF.CEX-06 | Update Component zip Import to support new JSON/DDP format |  | 5d | 2012-05-29 A | 2012-06-04 A |  | 100% |  |  |  | start no earlier than 2012-05-29 | Gabor Pap; Kevin Smyth; Adam Nagel | 48h | 48h |  | VForge |  |
| 445 | VF.CEX-07 | Copy Component from Component Exchange Database to Project Repo |  | 2d | 2012-07-04 A | 2012-07-05 |  | 50% | 1d | 137d |  | start no earlier than 2012-07-04 | Gabor Pap | 16h | 8h |  | VForge | CC3 |
| 446 | VF.CEX-08 | Component Model 2 CyPhy Library (dll) |  | 1d? | 2012-08-08 A | 2012-08-08 | 402 | 90% | 0.1d? | 112.9d | 0d |  |  |  |  |  | Language |  |
| 447 | VF.CEX-09 | MX.VFC |  | 1d? | 2012-08-09 A | 2012-08-09 | 446 | 90% | 0.1d? | 112d |  |  |  |  |  |  | Language |  |
| 448 | VF.CEX-10 | Test import of cyber controllers |  | 1d | 2012-07-09 | 2012-07-10 | 112, 114 |  |  | 134.25d |  |  | Alex Mendes | 8h |  |  | Cyber | * CS1, CS5, CS6, CS7 |
| 449 | VF.CEX-11 | Test publishing Physical Computing Assemblies to VForge |  | 3d | 2012-08-10 | 2012-08-15 | 119 |  |  | 108.55d |  |  | Alex Mendes | 24h |  |  | Cyber | CS2 |
| 450 | VF.DEX | **Design Exchange** |  | 17d | 2012-07-13 A | 2012-08-06 |  | 21% | 13.5d | 115d |  |  |  | 256h | 56h | -------- |  |  |
| 451 | VF.DEX-01 | Define Design Exchange capabilities |  | 5d | 2012-07-13 | 2012-07-19 | 60 |  |  | 118.5d | 0d |  | Adam Nagel; Gabor Pap | 80h |  |  | VForge | CD1 |
| 452 | VF.DEX-02 | Publish Design and Design Submittal |  | 2w | 2012-07-20 A | 2012-08-02 | 451 | 35% | 1.3w | 115d | 0d |  | Adam Nagel; Gabor Pap | 160h | 56h |  | VForge |  |
| 453 | VF.DEX-03 | Copy Design to Project Repository |  | 2d | 2012-08-03 | 2012-08-06 | 452 |  |  | 115d |  |  | Gabor Pap | 16h |  |  | VForge | CD1 |
| 454 | VF.TEX | **TestBench Exchange** |  | 12d | 2012-07-13 | 2012-07-30 | 60 |  |  | 120d |  |  |  |  |  | -------- |  |  |
| 455 | VF.TEX-01 | Design VForge TestBench Exchange |  | 1w | 2012-07-13 | 2012-07-19 |  |  |  | 120d | 0d |  |  |  |  |  | VForge |  |
| 456 | VF.TEX-02 | Publish TestBenches to VF |  | 3d | 2012-07-20 | 2012-07-24 | 455 |  |  | 120d | 0d |  |  |  |  |  | VForge | CT1 |
| 457 | VF.TEX-03 | Download TestBenches from VF |  | 4d | 2012-07-25 | 2012-07-30 | 456 |  |  | 120d |  | start no earlier than 2012-07-24 |  |  |  |  | VForge | CT2 |

Notes:
- 446: TODO: Same as MX.CLM-01.2 ?
- 448: CS6: Make sure port semantics are correctly captured and reflected in the component interface.
- 449: Make sure the CyPhyML and ESMoL models import together.

| ID | WBS | Task | Duration | Start | Finish | Predecessors | Complete | Remaining | Total slack | Free slack | Constraint | Resources | Work | Actual work | Text5 | Team | Thread(s) |
| --- | --- | --- | --- | --- | --- | --- | --- | --- | --- | --- | --- | --- | --- | --- | --- | --- | --- |
| 458 | VF.PRJ | **Project Repository** | 5d | 2012-06-25 A | 2012-06-29 A |  | 100% |  |  |  |  |  | 64h | 64h | -------- |  |  |
| 459 | VF.PRJ-01 | Define Standard Repo Structure | 3d | 2012-06-25 A | 2012-06-27 A | 406 | 100% |  |  |  |  | Adam Nagel; Zsolt Lattmann | 48h | 48h |  | Language |  |
| 460 | VF.PRJ-02 | Create Project | 2d | 2012-06-28 A | 2012-06-29 A | 459 | 100% |  |  |  |  | Gabor Pap | 16h | 16h |  | VForge |  |
| 461 | VF.JOB | **Job Manager** | 95d | 2012-07-09 | 2012-11-16 |  |  |  | 41d |  |  |  | 304h |  | -------- |  |  |
| 462 | VF.JOB-01 | Define Manifest for Job submission | 3d | 2012-07-09 | 2012-07-11 | 408 |  |  | 108d | 1d |  | Zsolt Lattmann | 24h |  |  | Dynamics | AD1b |
| 463 | VF.JOB-02 | Submit Job to standing cloud nodes | 2w | 2012-10-01 | 2012-10-12 | 462, 83 |  |  | 51d | 10d | start no earlier than 2012-09-10 | Graham Hemingway | 80h |  |  | VForge | AD1b |
| 464 | VF.JOB-03 | Job submission with cloud node creation | 3w | 2012-10-29 | 2012-11-16 | 463, 86 |  |  | 41d |  |  | Graham Hemingway | 120h |  |  | VForge | AD1b |
| 465 | VF.JOB-04 | REST Job submit interface | 1w | 2012-10-29 | 2012-11-02 | 86 |  |  | 51d |  |  | Graham Hemingway | 40h |  |  | VForge | AD1b |
| 466 | VF.JOB-05 | S3 Storage management | 1w | 2012-07-09 | 2012-07-13 | 408 |  |  | 131d |  |  | Graham Hemingway | 40h |  |  | VForge | AD1b |
| 467 | VF.CAD | **CAD as a Service** | 29d | 2012-08-27 | 2012-10-04 |  |  |  | 72d |  |  |  | 184h |  | -------- |  |  |
| 468 | VF.CAD-01 | **Assembly as a Service** | 19d | 2012-08-27 | 2012-09-20 | 271 |  |  | 72d | 0d |  |  | 184h |  |  |  |  |
| 469 | VF.CAD-01.1 | Design | 1w | 2012-08-27 | 2012-08-31 |  |  |  | 72d | 0d |  |  |  |  |  | CAD / FEA |  |
| 470 | VF.CAD-01.2 | Implement / Integrate | 5d | 2012-09-03 | 2012-09-07 | 469 |  |  | 72d | 0d |  | Robert Owens | 40h |  |  | CAD / FEA |  |
| 471 | VF.CAD-01.3 | Test | 5d | 2012-09-10 | 2012-09-14 | 470 |  |  | 72d | 0d |  | Robert Owens; Di Yao | 80h |  |  | CAD / FEA |  |
| 472 | VF.CAD-01.4 | Document | 4d | 2012-09-17 | 2012-09-20 | 471 |  |  | 72d |  |  | Di Yao; Robert Owens | 64h |  |  | CAD / FEA |  |
| 473 | VF.CAD-02 | **FEA as a Service** | 10d | 2012-09-21 | 2012-10-04 | 471 |  |  | 72d |  |  |  |  |  |  |  |  |
| 474 | VF.CAD-02.1 | Integration | 5d | 2012-09-21 | 2012-09-27 | 468 |  |  | 72d | 0d |  |  |  |  |  | CAD / FEA | AF1b |
| 475 | VF.CAD-02.2 | Remote Visualization Tool(s) | 5d | 2012-09-28 | 2012-10-04 | 474 |  |  | 72d |  |  |  |  |  |  | CAD / FEA | AF2b |
| 476 | VF.DSH | **Dashboard** | 33d | 2012-06-04 A | 2012-07-18 |  | 98% | 0.78d | 126d | 0d |  |  | 272h | 265.6h | -------- |  |  |
| 477 | VF.DSH-01 | Raw Data Browser | 4d | 2012-07-13 A | 2012-07-18 | 60 | 80% | 0.8d | 126d |  |  | Justin Knight | 32h | 25.6h |  | Dashboard | * AD2a, AD2b |
| 478 | VF.DSH-02 | Publish as a VForge Visualizer | 6w | 2012-06-04 A | 2012-07-13 A |  | 100% |  |  |  | start no earlier than 2012-06-04 | Georgia Tech | 240h | 240h |  | Dashboard | * AD2a, AD2b |
| 479 | VF.TYP | **Type Libraries** | 43d | 2012-07-13 A | 2012-09-11 |  | 1% | 42.5d | 89d |  |  |  | 248h | 2.88h | -------- |  |  |
| 480 | VF.TYP-01 | Implement External Port Library | 3d | 2012-07-13 A | 2012-07-17 | 60 | 12% | 2.64d | 101d | 0d |  | Kevin Smyth | 24h | 2.88h |  | VForge |  |
| 481 | VF.TYP-02 | Implement Structural Interface Library | 8d | 2012-08-03 | 2012-08-14 | 104, 480 |  |  | 89d | 0d |  | Kevin Smyth | 64h |  |  | VForge |  |
| 482 | VF.TYP-04 | Implement Hierarchical Port Library | 2w | 2012-08-15 | 2012-08-28 | 481 |  |  | 89d | 0d |  | Kevin Smyth | 80h |  |  | VForge |  |
| 483 | VF.TYP-05 | Implement Compound Feature Library | 2w | 2012-08-29 | 2012-09-11 | 482 |  |  | 89d |  |  | Kevin Smyth | 80h |  |  | VForge |  |

Notes:
- 462: TODO: compare with MX.DYN-03.2 and MX.MAS-04
